How a schedule from MS Project changed from version to version. A marks actual dates.

## Version 1 (saved 2021-10-14, file XP 14-10-21.mpp)

| ID | WBS | Task | Duration | Start | Finish | Predecessors | Total float | Constraint |
| --- | --- | --- | --- | --- | --- | --- | --- | --- |
| 1 | 1 | **Fase 0** | 13d? | 2021-11-02 | 2021-11-18 |  | 0d |  |
| 2 |  | Adquisición de Productos | 0.5d? | 2021-11-02 | 2021-11-02 |  | 28.25d |  |
| 3 |  | Solicitar Presupuesto INICIO | 0d | 2021-11-02 | 2021-11-02 | 2 | 28.25d |  |
| 4 |  | Solicitar Presupuesto FIN | 0d | 2021-11-09 | 2021-11-09 | 3 | 5d | finish no earlier than 2021-11-09 |
| 5 |  | Seleccionar Proveedor de cada Producto | 8h | 2021-11-10 | 2021-11-10 | 4 | 22.75d |  |
| 6 |  | Instalación y Configuración INICIO | 0d | 2021-11-10 | 2021-11-10 | 5 | 22.75d |  |
| 7 |  | Instalación y Configuración FIN | 0d | 2021-11-17 | 2021-11-17 | 6 | 0d | finish no earlier than 2021-11-17 |
| 8 |  | Revisión del Equipamiento | 1d? | 2021-11-18 | 2021-11-18 | 7 | 0d |  |
| 9 | 2 | **Diseño Alto Nivel** | 25d? | 2021-12-08 | 2022-01-12 |  | 0d |  |
| 10 |  | Elaborar Arquitectura (diseño alto nivel) | 25d? | 2021-12-08 | 2022-01-12 | 48 | 0d |  |
| 11 |  | Elaborar Doc. Técnico Diseño I | 25d? | 2021-12-08 | 2022-01-12 | 10FF | 35.48d |  |
| 12 |  | Diseño BBDD (diseño alto nivel) | 25d? | 2021-12-08 | 2022-01-12 | 10SS | 0d |  |
| 13 |  | Elaborar Arquitectura (diseño alto nivel) II | 25d? | 2021-12-08 | 2022-01-12 | 12FF | 35.48d |  |
| 14 | 3 | **Diseño Bajo Nivel** | 29d? | 2021-12-24 | 2022-02-03 |  | 0d |  |
| 15 |  | Detalle Componentes (diseño bajo nivel) | 25d? | 2021-12-24 | 2022-01-28 | 12SS+5%, 10SS+5% | 0d | start no earlier than 2021-11-22 |
| 16 |  | Elaborar Doc. Técnico Diseño III | 25d? | 2021-12-24 | 2022-01-28 | 15FF | 18.98d |  |
| 17 |  | Revisión Técnica de Diseño Software (RDS) | 16h | 2022-01-28 | 2022-02-01 | 16 | 18.98d |  |
| 18 |  | Actualizar Doc. Usuario | 2d? | 2022-02-01 | 2022-02-03 | 17 | 18.98d |  |
| 19 | 4 | **Implementación** | 9d? | 2022-02-04 | 2022-02-17 |  | 0d |  |
| 20 |  | Implementar BBDD | 5d? | 2022-02-04 | 2022-02-11 | 36 | 14.47d |  |
| 21 |  | Implementar Unidades I | 5d? | 2022-02-04 | 2022-02-11 | 36 | 0d |  |
| 22 |  | Implementar Unidades II | 4d? | 2022-02-11 | 2022-02-17 | 21 | 0d |  |
| 23 |  | Documentar Unidades I | 5d? | 2022-02-04 | 2022-02-11 | 21SS | 0d |  |
| 24 |  | Documentar Unidades II | 4d? | 2022-02-11 | 2022-02-17 | 23 | 0d |  |
| 25 | 5 | **Pruebas de Unidad** | 9d? | 2022-02-04 | 2022-02-17 |  | 0d |  |
| 26 |  | Ejecutar Pruebas de Unidad I | 5d? | 2022-02-04 | 2022-02-11 | 21SS | 0d |  |
| 27 |  | Ejecutar Pruebas de Unidad II | 4d? | 2022-02-11 | 2022-02-17 | 26 | 0d |  |
| 28 | 6 | **Pruebas de Aceptación** | 66.22d? | 2021-11-30 | 2022-03-02 |  | 5d |  |
| 29 |  | Elaborar Plan Pruebas Aceptación | 3d? | 2021-11-30 | 2021-12-03 | 49SS, 51 | 64.22d |  |
| 30 |  | Ejecutar Plan Pruebas Aceptación | 24h | 2022-02-25 | 2022-03-02 | 41 | 0d |  |
| 31 | 7 | **Pruebas de Sistema** | 30.98d? | 2022-01-12 | 2022-02-24 |  | 9.5d |  |
| 32 |  | Elaborar Plan Pruebas Sistema | 3d? | 2022-01-12 | 2022-01-17 | 12, 10 | 33.48d |  |
| 33 | 7.2 | **Servidor Amazon** | 1.88d? | 2022-02-22 | 2022-02-24 |  | 0d |  |
| 34 |  | Ejecutar Plan Pruebas Sistema | 1.88d? | 2022-02-22 | 2022-02-24 | 40 | 0d |  |
| 35 | 8 | **Pruebas de Integración** | 16d? | 2022-01-28 | 2022-02-21 |  | 0d |  |
| 36 |  | Elaborar Plan Pruebas Integración | 4.5d? | 2022-01-28 | 2022-02-04 | 15 | 0d |  |
| 37 | 8.2 | **Servidor Amazon** | 2.5d? | 2022-02-17 | 2022-02-21 |  | 0d |  |
| 38 |  | Ejecutar Plan Pruebas Integración | 2.5d? | 2022-02-17 | 2022-02-21 | 27, 24, 22 | 0d |  |
| 39 |  | Test de Usabilidad | 8h | 2022-02-22 | 2022-02-23 | 34SS | 0.88d |  |
| 40 |  | Preparar Paquete de Instalación | 0.6d? | 2022-02-21 | 2022-02-22 | 38 | 0d |  |
| 41 |  | Actualizar Doc. Usuario | 1.5d? | 2022-02-24 | 2022-02-25 | 34, 39 | 0d |  |
| 42 |  | Elaborar Plan Instalación & Formación | 1.5d? | 2022-03-02 | 2022-03-04 | 30 | 0d |  |
| 43 |  | Subcontrata Instalación Infraestructura Cliente INICIO | 0d | 2022-03-04 | 2022-03-04 | 42 | 1.5d |  |
| 44 |  | Subcontrata Instalación Infraestructura Cliente FIN | 0d | 2022-03-04 | 2022-03-04 | 43 | 1.5d | finish no earlier than 2022-01-08 |
| 45 |  | Instalación de Cliente | 1.5d? | 2022-03-04 | 2022-03-07 | 42 | 0d |  |
| 46 |  | Formación | 16h | 2022-03-07 | 2022-03-09 | 44, 45 | 0d |  |
| 47 | 17 | **Análisis** | 13.25d? | 2021-11-19 | 2021-12-08 |  | 0d |  |
| 48 |  | Peer Review de Requisitos | 16h | 2021-12-06 | 2021-12-08 | 49 | 0d |  |
| 49 |  | Elaborar Doc. Usuario | 3.75d? | 2021-11-30 | 2021-12-06 | 51 | 0d |  |
| 50 |  | Elaborar ERS | 6.25d? | 2021-11-19 | 2021-11-29 | 8 | 0d |  |
| 51 |  | Supervisión ERS | 1.25d? | 2021-11-29 | 2021-11-30 | 50 | 0d |  |

## Version 2 (saved 2021-10-18, file XP 17-10-21.mpp)

Last finish 2022-03-09 → 2022-03-16 (+7d).

Changed:

| ID | Task | Start | Finish | Total float | Predecessors | Other |
| --- | --- | --- | --- | --- | --- | --- |
| 4 | Solicitar Presupuesto FIN |  |  | 5d → 0d | 3 → 3FS+5d |  |
| 7 | Instalación y Configuración FIN |  |  |  | 6 → 6FS+5d |  |
| 13 | Elaborar Doc. Técnico Diseño II |  |  | 35.48d → 45.48d |  | was named Elaborar Arquitectura (diseño alto nivel) II |
| 17 | Revisión Técnica de Diseño Software (RDS) |  |  | 18.98d → 28.98d |  | resources none → D1; D2 |
| 44 | Subcontrata Instalación Infraestructura Cliente FIN | 2022-03-04 → 2022-03-11 (+7d) | 2022-03-04 → 2022-03-11 (+7d) | 1.5d → 0d | 43 → 43FS+40h |  |
| 45 | Instalación de Cliente | 2022-03-04 → 2022-03-11 (+7d) | 2022-03-07 → 2022-03-14 (+7d) |  | 42 → 44 |  |
| 46 | Formación | 2022-03-07 → 2022-03-14 (+7d) | 2022-03-09 → 2022-03-16 (+7d) |  | 44, 45 → 45 |  |

## Version 3 (saved 2021-10-18, file Supervision B.mpp)

Last finish 2022-03-16 → 2022-01-24 (-51d).

Added:

| ID | Task | Duration | Start | Finish | Resources |
| --- | --- | --- | --- | --- | --- |
| 12 | **Supervisión ERS** | 6.25d? | 2021-11-19 | 2021-11-29 | LOPD [25%] |

Removed: 11 Elaborar Doc. Técnico Diseño I; 13 Elaborar Doc. Técnico Diseño II; 22 Implementar Unidades II; 24 Documentar Unidades II; 27 Ejecutar Pruebas de Unidad II; 33 Servidor Amazon; 37 Servidor Amazon; 51 Supervisión ERS

Changed:

| ID | Task | Start | Finish | Duration | Total float | Predecessors | Other |
| --- | --- | --- | --- | --- | --- | --- | --- |
| 4 | Solicitar Presupuesto FIN |  |  |  | 0d → 5d | 3FS+5d → 3 |  |
| 7 | Instalación y Configuración FIN |  |  |  |  | 6FS+5d → 6 |  |
| 9 | **Análisis** |  | 2021-12-08 → 2021-12-06 (-2d) | 13.25d? → 12d? |  |  |  |
| 10 | Peer Review de Requisitos | 2021-12-06 → 2021-12-03 (-3d) | 2021-12-08 → 2021-12-06 (-2d) |  |  |  |  |
| 11 | Elaborar Doc. Usuario | 2021-11-30 → 2021-11-29 (-1d) | 2021-12-06 → 2021-12-02 (-4d) |  |  | Supervisión ERS → 13 | resources A1; A2; Papel [10000%]; Toner [10000%] → A1; A2 |
| 13 | Elaborar ERS |  |  |  |  |  | resources A1; A2; Papel [10000%]; Toner [10000%] → A1; A2 |
| 14 | **Diseño Alto Nivel** | 2021-12-08 → 2021-12-07 (-1d) | 2022-01-12 → 2021-12-13 (-30d) | 25d? → 5d? |  |  |  |
| 15 | Elaborar Arquitectura (diseño alto nivel) | 2021-12-08 → 2021-12-07 (-1d) | 2022-01-12 → 2021-12-13 (-30d) | 25d? → 5d? |  |  | resources D1 [40%] → D1; D2 |
| 16 | Diseño BBDD (diseño alto nivel) | 2021-12-08 → 2021-12-07 (-1d) | 2022-01-12 → 2021-12-13 (-30d) | 25d? → 5d? |  |  | resources D2 [40%] → D1; D2 |
| 17 | **Diseño Bajo Nivel** | 2021-12-24 → 2021-12-09 (-15d) | 2022-02-03 → 2021-12-29 (-36d) | 29d? → 14d? |  |  |  |
| 18 | Detalle Componentes (diseño bajo nivel) | 2021-12-24 → 2021-12-09 (-15d) | 2022-01-28 → 2021-12-23 (-36d) | 25d? → 10d? |  |  | resources D1 [40%]; D2 [40%] → D1; D2 |
| 19 | Elaborar Doc. Técnico Diseño | 2021-12-24 → 2021-12-16 (-8d) | 2022-01-28 → 2021-12-23 (-36d) | 25d? → 5d? | 28.98d → 0d | 18FF → 15SS, 18FF | was named Elaborar Doc. Técnico Diseño III; resources D1 [10%]; D2 [10%]; Papel [5000%]; Toner [5000%] → D1; D2 |
| 20 | Revisión Técnica de Diseño Software (RDS) | 2022-01-28 → 2021-12-23 (-36d) | 2022-02-01 → 2021-12-27 (-36d) |  | 28.98d → 0d |  | resources D1; D2 → none |
| 21 | Actualizar Doc. Usuario | 2022-02-01 → 2021-12-27 (-36d) | 2022-02-03 → 2021-12-29 (-36d) |  | 28.98d → 0d |  | resources D1; D2; Papel [10000%]; Toner [10000%] → D1; D2 |
| 22 | **Implementación** | 2022-02-04 → 2021-12-29 (-37d) | 2022-02-17 → 2022-01-04 (-44d) | 9d? → 4d? |  |  |  |
| 23 | Implementar BBDD | 2022-02-04 → 2021-12-29 (-37d) | 2022-02-11 → 2021-12-30 (-43d) | 5d? → 1d? | 23.48d → 0d | 35 → 21 | resources DS1 → DS1; DS2; DS3; DS4; DS5 |
| 24 | Implementar Unidades | 2022-02-04 → 2021-12-29 (-37d) | 2022-02-11 → 2022-01-04 (-38d) | 5d? → 4d? |  | 35 → 23SS | was named Implementar Unidades I; resources DS2 [50%]; DS3 [50%]; DS4 [50%]; DS5 [50%] → DS1; DS2; DS3; DS4; DS5 |
| 25 | Documentar Unidades | 2022-02-04 → 2021-12-29 (-37d) | 2022-02-11 → 2021-12-31 (-42d) | 5d? → 1.6d? | 0d → 2.4d |  | was named Documentar Unidades I; resources DS2 [20%]; DS3 [20%]; DS4 [20%]; DS5 [20%] → DS1; DS2; DS3; DS4; DS5 |
| 26 | **Pruebas de Unidad** | 2022-02-04 → 2021-12-29 (-37d) | 2022-02-17 → 2021-12-31 (-48d) | 9d? → 2.4d? | 0d → 1.6d |  |  |
| 27 | Ejecutar Pruebas de Unidad | 2022-02-04 → 2021-12-29 (-37d) | 2022-02-11 → 2021-12-31 (-42d) | 5d? → 2.4d? | 0d → 1.6d |  | was named Ejecutar Pruebas de Unidad I; resources DS2 [30%]; DS3 [30%]; DS4 [30%]; DS5 [30%] → DS1; DS2; DS3; DS4; DS5 |
| 28 | **Pruebas de Aceptación** | 2021-11-30 → 2021-11-29 (-1d) | 2022-03-02 → 2022-01-17 (-44d) | 66.22d? → 35.73d? | 10d → 5d |  |  |
| 29 | Elaborar Plan Pruebas Aceptación | 2021-11-30 → 2021-11-29 (-1d) | 2021-12-03 → 2021-12-02 (-1d) |  | 73.22d → 37.73d | 11SS, Supervisión ERS → 13 |  |
| 30 | Ejecutar Plan Pruebas Aceptación | 2022-02-25 → 2022-01-12 (-44d) | 2022-03-02 → 2022-01-17 (-44d) |  |  |  |  |
| 31 | **Pruebas de Sistema** | 2022-01-12 → 2021-12-14 (-29d) | 2022-02-24 → 2022-01-11 (-44d) | 30.98d? → 20.48d? | 14.5d → 9.5d |  |  |
| 32 | Elaborar Plan Pruebas Sistema | 2022-01-12 → 2021-12-14 (-29d) | 2022-01-17 → 2021-12-16 (-32d) |  | 42.48d → 26.98d |  |  |
| 33 | Ejecutar Plan Pruebas Sistema | 2022-02-22 → 2022-01-07 (-46d) | 2022-02-24 → 2022-01-11 (-44d) |  |  |  |  |
| 34 | **Pruebas de Integración** | 2022-01-28 → 2021-12-23 (-36d) | 2022-02-21 → 2022-01-06 (-46d) | 16d? → 10.5d? | 0d → 8d |  |  |
| 35 | Elaborar Plan Pruebas Integración | 2022-01-28 → 2021-12-23 (-36d) | 2022-02-04 → 2021-12-29 (-37d) |  | 0d → 17.98d |  |  |
| 36 | Ejecutar Plan Pruebas Integración | 2022-02-17 → 2022-01-04 (-44d) | 2022-02-21 → 2022-01-06 (-46d) |  |  | Ejecutar Pruebas de Unidad II, Documentar Unidades II, Implementar Unidades II → 27, 25, 24 |  |
| 37 | Test de Usabilidad | 2022-02-22 → 2022-01-07 (-46d) | 2022-02-23 → 2022-01-10 (-44d) |  |  |  |  |
| 38 | Preparar Paquete de Instalación | 2022-02-21 → 2022-01-07 (-45d) | 2022-02-22 → 2022-01-07 (-46d) |  |  |  |  |
| 39 | Actualizar Doc. Usuario | 2022-02-24 → 2022-01-11 (-44d) | 2022-02-25 → 2022-01-12 (-44d) |  |  |  | resources D1; D2; Papel [10000%]; Toner [10000%] → D1; D2 |
| 40 | Elaborar Plan Instalación & Formación | 2022-03-02 → 2022-01-17 (-44d) | 2022-03-04 → 2022-01-19 (-44d) |  |  |  |  |
| 41 | Subcontrata Instalación Infraestructura Cliente INICIO | 2022-03-04 → 2022-01-19 (-44d) | 2022-03-04 → 2022-01-19 (-44d) |  | 0d → 1.5d |  |  |
| 42 | Subcontrata Instalación Infraestructura Cliente FIN | 2022-03-11 → 2022-01-19 (-51d) | 2022-03-11 → 2022-01-19 (-51d) |  | 0d → 1.5d | 41FS+40h → 41 |  |
| 43 | Instalación de Cliente | 2022-03-11 → 2022-01-19 (-51d) | 2022-03-14 → 2022-01-20 (-53d) |  |  | 42 → 40 | resources DS1; DS2; DS3; DS4; DS5; Transporte [500%] → DS1; DS2; DS3; DS4; DS5 |
| 44 | Formación | 2022-03-14 → 2022-01-20 (-53d) | 2022-03-16 → 2022-01-24 (-51d) |  |  | 43 → 42, 43 | resources DS1; DS2; DS3; DS4; DS5 → none |

## Version 4 (saved 2021-10-18, file Supervision C.mpp)

Last finish 2022-01-24 → 2022-01-25 (+1d).

Added:

| ID | Task | Duration | Start | Finish | Predecessors | Resources |
| --- | --- | --- | --- | --- | --- | --- |
| 13 | Supervisión ERS (1) | 1d? | 2021-11-22 | 2021-11-23 | 12 | LOPD |
| 15 | Supervisión ERS (2) | 1d? | 2021-11-24 | 2021-11-25 | 14 | LOPD |
| 16 | Elaborar ERS (3) | 1.56d? | 2021-11-24 | 2021-11-25 | 14 | A1; A2 |
| 17 | Supervisión ERS (3) | 1d? | 2021-11-25 | 2021-11-26 | 16 | LOPD |
| 18 | Elaborar ERS (4) | 1.56d? | 2021-11-25 | 2021-11-29 | 16 | A1; A2 |
| 19 | Supervisión ERS (4) | 1d? | 2021-11-29 | 2021-11-30 | 18 | LOPD |

Changed:

| ID | Task | Start | Finish | Duration | Total float | Predecessors | Other |
| --- | --- | --- | --- | --- | --- | --- | --- |
| 9 | **Análisis** |  | 2021-12-06 → 2021-12-07 (+1d) | 12d? → 13d? |  |  |  |
| 10 | Peer Review de Requisitos | 2021-12-03 → 2021-12-06 (+3d) | 2021-12-06 → 2021-12-07 (+1d) |  |  |  |  |
| 11 | Elaborar Doc. Usuario | 2021-11-29 → 2021-11-30 (+1d) | 2021-12-02 → 2021-12-03 (+1d) |  |  | 12 → 19 |  |
| 12 | Elaborar ERS (1) |  | 2021-11-29 → 2021-11-22 (-7d) | 6.25d? → 1.56d? |  |  | was named Elaborar ERS |
| 14 | Elaborar ERS (2) | 2021-11-19 → 2021-11-22 (+3d) | 2021-11-29 → 2021-11-24 (-5d) | 6.25d? → 1.56d? |  | none → 12 | was named Supervisión ERS; resources LOPD [25%] → A1; A2 |
| 20 | **Diseño Alto Nivel** | 2021-12-07 → 2021-12-08 (+1d) | 2021-12-13 → 2021-12-14 (+1d) |  |  |  |  |
| 21 | Elaborar Arquitectura (diseño alto nivel) | 2021-12-07 → 2021-12-08 (+1d) | 2021-12-13 → 2021-12-14 (+1d) |  |  |  |  |
| 22 | Diseño BBDD (diseño alto nivel) | 2021-12-07 → 2021-12-08 (+1d) | 2021-12-13 → 2021-12-14 (+1d) |  |  |  |  |
| 23 | **Diseño Bajo Nivel** | 2021-12-09 → 2021-12-10 (+1d) | 2021-12-29 → 2021-12-30 (+1d) |  |  |  |  |
| 24 | Detalle Componentes (diseño bajo nivel) | 2021-12-09 → 2021-12-10 (+1d) | 2021-12-23 → 2021-12-24 (+1d) |  |  |  |  |
| 25 | Elaborar Doc. Técnico Diseño | 2021-12-16 → 2021-12-17 (+1d) | 2021-12-23 → 2021-12-24 (+1d) |  |  |  |  |
| 26 | Revisión Técnica de Diseño Software (RDS) | 2021-12-23 → 2021-12-24 (+1d) | 2021-12-27 → 2021-12-28 (+1d) |  |  |  |  |
| 27 | Actualizar Doc. Usuario | 2021-12-27 → 2021-12-28 (+1d) | 2021-12-29 → 2021-12-30 (+1d) |  |  |  |  |
| 28 | **Implementación** | 2021-12-29 → 2021-12-30 (+1d) | 2022-01-04 → 2022-01-05 (+1d) |  |  |  |  |
| 29 | Implementar BBDD | 2021-12-29 → 2021-12-30 (+1d) | 2021-12-30 → 2021-12-31 (+1d) |  |  |  |  |
| 30 | Implementar Unidades | 2021-12-29 → 2021-12-30 (+1d) | 2022-01-04 → 2022-01-05 (+1d) |  |  |  |  |
| 31 | Documentar Unidades | 2021-12-29 → 2021-12-30 (+1d) | 2021-12-31 → 2022-01-03 (+3d) |  |  |  |  |
| 32 | **Pruebas de Unidad** | 2021-12-29 → 2021-12-30 (+1d) | 2021-12-31 → 2022-01-03 (+3d) |  |  |  |  |
| 33 | Ejecutar Pruebas de Unidad | 2021-12-29 → 2021-12-30 (+1d) | 2021-12-31 → 2022-01-03 (+3d) |  |  |  |  |
| 34 | **Pruebas de Aceptación** | 2021-11-29 → 2021-11-30 (+1d) | 2022-01-17 → 2022-01-18 (+1d) |  |  |  |  |
| 35 | Elaborar Plan Pruebas Aceptación | 2021-11-29 → 2021-11-30 (+1d) | 2021-12-02 → 2021-12-03 (+1d) |  | 37.73d → 38.23d | 12 → 19 |  |
| 36 | Ejecutar Plan Pruebas Aceptación | 2022-01-12 → 2022-01-13 (+1d) | 2022-01-17 → 2022-01-18 (+1d) |  |  |  |  |
| 37 | **Pruebas de Sistema** | 2021-12-14 → 2021-12-15 (+1d) | 2022-01-11 → 2022-01-12 (+1d) |  |  |  |  |
| 38 | Elaborar Plan Pruebas Sistema | 2021-12-14 → 2021-12-15 (+1d) | 2021-12-16 → 2021-12-17 (+1d) |  | 26.98d → 27.48d |  |  |
| 39 | Ejecutar Plan Pruebas Sistema | 2022-01-07 → 2022-01-10 (+3d) | 2022-01-11 → 2022-01-12 (+1d) |  |  |  |  |
| 40 | **Pruebas de Integración** | 2021-12-23 → 2021-12-24 (+1d) | 2022-01-06 → 2022-01-07 (+1d) |  |  |  |  |
| 41 | Elaborar Plan Pruebas Integración | 2021-12-23 → 2021-12-24 (+1d) | 2021-12-29 → 2021-12-30 (+1d) |  |  |  |  |
| 42 | Ejecutar Plan Pruebas Integración | 2022-01-04 → 2022-01-05 (+1d) | 2022-01-06 → 2022-01-07 (+1d) |  |  |  |  |
| 43 | Test de Usabilidad | 2022-01-07 → 2022-01-10 (+3d) | 2022-01-10 → 2022-01-11 (+1d) |  |  |  |  |
| 44 | Preparar Paquete de Instalación | 2022-01-07 → 2022-01-10 (+3d) | 2022-01-07 → 2022-01-10 (+3d) |  |  |  |  |
| 45 | Actualizar Doc. Usuario | 2022-01-11 → 2022-01-12 (+1d) | 2022-01-12 → 2022-01-13 (+1d) |  |  |  |  |
| 46 | Elaborar Plan Instalación & Formación | 2022-01-17 → 2022-01-18 (+1d) | 2022-01-19 → 2022-01-20 (+1d) |  |  |  |  |
| 47 | Subcontrata Instalación Infraestructura Cliente INICIO | 2022-01-19 → 2022-01-20 (+1d) | 2022-01-19 → 2022-01-20 (+1d) |  |  |  |  |
| 48 | Subcontrata Instalación Infraestructura Cliente FIN | 2022-01-19 → 2022-01-20 (+1d) | 2022-01-19 → 2022-01-20 (+1d) |  |  |  |  |
| 49 | Instalación de Cliente | 2022-01-19 → 2022-01-20 (+1d) | 2022-01-20 → 2022-01-21 (+1d) |  |  |  |  |
| 50 | Formación | 2022-01-20 → 2022-01-21 (+1d) | 2022-01-24 → 2022-01-25 (+1d) |  |  |  |  |

## Version 5 (saved 2021-10-18, file Supervision D.mpp)

Last finish 2022-01-25 → 2022-05-03 (+98d).

Removed: 13 Supervisión ERS (1); 15 Supervisión ERS (2); 16 Elaborar ERS (3); 17 Supervisión ERS (3); 18 Elaborar ERS (4); 19 Supervisión ERS (4)

Changed:

| ID | Task | Start | Finish | Duration | Total float | Predecessors | Other |
| --- | --- | --- | --- | --- | --- | --- | --- |
| 1 | **Fase 0** |  |  | 13d? → 6d? |  |  |  |
| 5 | Seleccionar Proveedor de cada Producto | 2021-11-10 → 2021-11-11 (+1d) | 2021-11-10 → 2021-11-11 (+1d) |  | 22.75d → 1d |  |  |
| 6 | Instalación y Configuración INICIO | 2021-11-10 → 2021-11-11 (+1d) | 2021-11-10 → 2021-11-11 (+1d) |  | 5d → 1d |  |  |
| 9 | **Análisis** | 2021-11-19 → 2021-11-23 (+4d) | 2021-12-07 → 2021-12-30 (+23d) | 13d? → 12d? |  |  |  |
| 10 | Peer Review de Requisitos | 2021-12-06 → 2021-12-28 (+22d) | 2021-12-07 → 2021-12-30 (+23d) |  |  |  |  |
| 11 | Elaborar Doc. Usuario | 2021-11-30 → 2021-12-14 (+14d) | 2021-12-03 → 2021-12-23 (+20d) |  |  | Supervisión ERS (4) → 13 |  |
| 12 | **Supervisión ERS** | 2021-11-22 → 2021-11-23 (+1d) | 2021-11-24 → 2021-12-14 (+20d) | 1.56d? → 15.25d? |  | 13 → none | was named Elaborar ERS (2); resources A1; A2 → LOPD |
| 13 | Elaborar ERS | 2021-11-19 → 2021-11-23 (+4d) | 2021-11-22 → 2021-12-14 (+22d) | 1.56d? → 6.25d? |  |  | was named Elaborar ERS (1) |
| 14 | **Diseño Alto Nivel** | 2021-12-08 → 2022-01-04 (+27d) | 2021-12-14 → 2022-01-18 (+35d) |  |  |  |  |
| 15 | Elaborar Arquitectura (diseño alto nivel) | 2021-12-08 → 2022-01-04 (+27d) | 2021-12-14 → 2022-01-18 (+35d) |  |  |  |  |
| 16 | Diseño BBDD (diseño alto nivel) | 2021-12-08 → 2022-01-04 (+27d) | 2021-12-14 → 2022-01-18 (+35d) |  |  |  |  |
| 17 | **Diseño Bajo Nivel** | 2021-12-10 → 2022-01-11 (+32d) | 2021-12-30 → 2022-03-01 (+61d) |  |  |  |  |
| 18 | Detalle Componentes (diseño bajo nivel) | 2021-12-10 → 2022-01-11 (+32d) | 2021-12-24 → 2022-02-15 (+53d) |  |  |  |  |
| 19 | Elaborar Doc. Técnico Diseño | 2021-12-17 → 2022-01-27 (+41d) | 2021-12-24 → 2022-02-15 (+53d) |  |  |  |  |
| 20 | Revisión Técnica de Diseño Software (RDS) | 2021-12-24 → 2022-02-15 (+53d) | 2021-12-28 → 2022-02-22 (+56d) |  |  |  |  |
| 21 | Actualizar Doc. Usuario | 2021-12-28 → 2022-02-22 (+56d) | 2021-12-30 → 2022-03-01 (+61d) |  |  |  |  |
| 22 | **Implementación** | 2021-12-30 → 2022-03-01 (+61d) | 2022-01-05 → 2022-03-15 (+69d) |  |  |  |  |
| 23 | Implementar BBDD | 2021-12-30 → 2022-03-01 (+61d) | 2021-12-31 → 2022-03-03 (+62d) |  |  |  |  |
| 24 | Implementar Unidades | 2021-12-30 → 2022-03-01 (+61d) | 2022-01-05 → 2022-03-15 (+69d) |  |  |  |  |
| 25 | Documentar Unidades | 2021-12-30 → 2022-03-01 (+61d) | 2022-01-03 → 2022-03-08 (+64d) |  |  |  |  |
| 26 | **Pruebas de Unidad** | 2021-12-30 → 2022-03-01 (+61d) | 2022-01-03 → 2022-03-08 (+64d) |  |  |  |  |
| 27 | Ejecutar Pruebas de Unidad | 2021-12-30 → 2022-03-01 (+61d) | 2022-01-03 → 2022-03-08 (+64d) |  |  |  |  |
| 28 | **Pruebas de Aceptación** | 2021-11-30 → 2021-12-14 (+14d) | 2022-01-18 → 2022-04-14 (+86d) |  |  |  |  |
| 29 | Elaborar Plan Pruebas Aceptación | 2021-11-30 → 2021-12-14 (+14d) | 2021-12-03 → 2021-12-23 (+20d) |  | 38.23d → 37.73d | Supervisión ERS (4) → 13 |  |
| 30 | Ejecutar Plan Pruebas Aceptación | 2022-01-13 → 2022-04-05 (+82d) | 2022-01-18 → 2022-04-14 (+86d) |  |  |  |  |
| 31 | **Pruebas de Sistema** | 2021-12-15 → 2022-01-20 (+36d) | 2022-01-12 → 2022-03-31 (+78d) |  |  |  |  |
| 32 | Elaborar Plan Pruebas Sistema | 2021-12-15 → 2022-01-20 (+36d) | 2021-12-17 → 2022-01-27 (+41d) |  | 27.48d → 26.98d |  |  |
| 33 | Ejecutar Plan Pruebas Sistema | 2022-01-10 → 2022-03-24 (+73d) | 2022-01-12 → 2022-03-31 (+78d) |  |  |  |  |
| 34 | **Pruebas de Integración** | 2021-12-24 → 2022-02-15 (+53d) | 2022-01-07 → 2022-03-22 (+74d) |  |  |  |  |
| 35 | Elaborar Plan Pruebas Integración | 2021-12-24 → 2022-02-15 (+53d) | 2021-12-30 → 2022-03-01 (+61d) |  |  |  |  |
| 36 | Ejecutar Plan Pruebas Integración | 2022-01-05 → 2022-03-15 (+69d) | 2022-01-07 → 2022-03-22 (+74d) |  |  |  |  |
| 37 | Test de Usabilidad | 2022-01-10 → 2022-03-24 (+73d) | 2022-01-11 → 2022-03-29 (+77d) |  |  |  |  |
| 38 | Preparar Paquete de Instalación | 2022-01-10 → 2022-03-24 (+73d) | 2022-01-10 → 2022-03-24 (+73d) |  |  |  |  |
| 39 | Actualizar Doc. Usuario | 2022-01-12 → 2022-03-31 (+78d) | 2022-01-13 → 2022-04-05 (+82d) |  |  |  |  |
| 40 | Elaborar Plan Instalación & Formación | 2022-01-18 → 2022-04-14 (+86d) | 2022-01-20 → 2022-04-21 (+91d) |  |  |  |  |
| 41 | Subcontrata Instalación Infraestructura Cliente INICIO | 2022-01-20 → 2022-04-21 (+91d) | 2022-01-20 → 2022-04-21 (+91d) |  |  |  |  |
| 42 | Subcontrata Instalación Infraestructura Cliente FIN | 2022-01-20 → 2022-04-21 (+91d) | 2022-01-20 → 2022-04-21 (+91d) |  |  |  |  |
| 43 | Instalación de Cliente | 2022-01-20 → 2022-04-21 (+91d) | 2022-01-21 → 2022-04-26 (+95d) |  |  |  |  |
| 44 | Formación | 2022-01-21 → 2022-04-26 (+95d) | 2022-01-25 → 2022-05-03 (+98d) |  |  |  |  |

## Version 6 (saved 2021-10-18, file Supervision A.mpp)

Last finish 2022-05-03 → 2022-01-26 (-97d).

Added:

| ID | Task | Duration | Start | Finish | Predecessors | Resources |
| --- | --- | --- | --- | --- | --- | --- |
| 11 | Supervisión ERS | 1.25d? | 2021-11-29 | 2021-11-30 | 10 | LOPD |
| 14 | **Diseño** | 16.5d? | 2021-12-08 | 2021-12-30 |  |  |

Removed: 12 Supervisión ERS

Changed:

| ID | Task | Start | Finish | Duration | Total float | Predecessors |
| --- | --- | --- | --- | --- | --- | --- |
| 1 | **Fase 0** |  |  | 6d? → 13d? |  |  |
| 5 | Seleccionar Proveedor de cada Producto | 2021-11-11 → 2021-11-10 (-1d) | 2021-11-11 → 2021-11-10 (-1d) |  | 1d → 22.75d |  |
| 6 | Instalación y Configuración INICIO | 2021-11-11 → 2021-11-10 (-1d) | 2021-11-11 → 2021-11-10 (-1d) |  | 1d → 5d |  |
| 9 | **Análisis** | 2021-11-23 → 2021-11-19 (-4d) | 2021-12-30 → 2021-12-08 (-22d) | 12d? → 13.25d? |  |  |
| 10 | Elaborar ERS | 2021-11-23 → 2021-11-19 (-4d) | 2021-12-14 → 2021-11-29 (-15d) |  |  |  |
| 12 | Elaborar Doc. Usuario | 2021-12-14 → 2021-11-30 (-14d) | 2021-12-23 → 2021-12-06 (-17d) |  |  | 10 → 11 |
| 13 | Peer Review de Requisitos | 2021-12-28 → 2021-12-06 (-22d) | 2021-12-30 → 2021-12-08 (-22d) |  |  |  |
| 15 | **Diseño Alto Nivel** | 2022-01-04 → 2021-12-08 (-27d) | 2022-01-18 → 2021-12-15 (-34d) |  |  |  |
| 16 | Elaborar Arquitectura (diseño alto nivel) | 2022-01-04 → 2021-12-08 (-27d) | 2022-01-18 → 2021-12-15 (-34d) |  |  |  |
| 17 | Diseño BBDD (diseño alto nivel) | 2022-01-04 → 2021-12-08 (-27d) | 2022-01-18 → 2021-12-15 (-34d) |  |  |  |
| 18 | **Diseño Bajo Nivel** | 2022-01-11 → 2021-12-10 (-32d) | 2022-03-01 → 2021-12-24 (-67d) | 14d? → 10d? |  |  |
| 19 | Detalle Componentes (diseño bajo nivel) | 2022-01-11 → 2021-12-10 (-32d) | 2022-02-15 → 2021-12-24 (-53d) |  |  |  |
| 20 | Elaborar Doc. Técnico Diseño | 2022-01-27 → 2021-12-17 (-41d) | 2022-02-15 → 2021-12-24 (-53d) |  |  |  |
| 21 | Revisión Técnica de Diseño Software (RDS) | 2022-02-15 → 2021-12-24 (-53d) | 2022-02-22 → 2021-12-28 (-56d) |  |  |  |
| 22 | Actualizar Doc. Usuario | 2022-02-22 → 2021-12-28 (-56d) | 2022-03-01 → 2021-12-30 (-61d) |  |  |  |
| 23 | **Implementación** | 2022-03-01 → 2021-12-30 (-61d) | 2022-03-15 → 2022-01-05 (-69d) |  |  |  |
| 24 | Implementar BBDD | 2022-03-01 → 2021-12-30 (-61d) | 2022-03-03 → 2021-12-31 (-62d) |  |  |  |
| 25 | Implementar Unidades | 2022-03-01 → 2021-12-30 (-61d) | 2022-03-15 → 2022-01-05 (-69d) |  |  |  |
| 26 | Documentar Unidades | 2022-03-01 → 2021-12-30 (-61d) | 2022-03-08 → 2022-01-03 (-64d) |  |  |  |
| 27 | **Pruebas de Unidad** | 2022-03-01 → 2021-12-30 (-61d) | 2022-03-08 → 2022-01-04 (-63d) |  |  |  |
| 28 | Ejecutar Pruebas de Unidad | 2022-03-01 → 2021-12-30 (-61d) | 2022-03-08 → 2022-01-04 (-63d) |  |  |  |
| 29 | **Pruebas de Aceptación** | 2021-12-14 → 2021-11-30 (-14d) | 2022-04-14 → 2022-01-19 (-85d) |  |  |  |
| 30 | Elaborar Plan Pruebas Aceptación | 2021-12-14 → 2021-11-30 (-14d) | 2021-12-23 → 2021-12-03 (-20d) |  | 37.73d → 38.73d | 10 → 11 |
| 31 | Ejecutar Plan Pruebas Aceptación | 2022-04-05 → 2022-01-14 (-81d) | 2022-04-14 → 2022-01-19 (-85d) |  |  |  |
| 32 | **Pruebas de Sistema** | 2022-01-20 → 2021-12-15 (-36d) | 2022-03-31 → 2022-01-12 (-78d) |  |  |  |
| 33 | Elaborar Plan Pruebas Sistema | 2022-01-20 → 2021-12-15 (-36d) | 2022-01-27 → 2021-12-20 (-38d) |  | 26.98d → 27.48d |  |
| 34 | Ejecutar Plan Pruebas Sistema | 2022-03-24 → 2022-01-10 (-73d) | 2022-03-31 → 2022-01-12 (-78d) |  |  |  |
| 35 | **Pruebas de Integración** | 2022-02-15 → 2021-12-24 (-53d) | 2022-03-22 → 2022-01-10 (-71d) |  |  |  |
| 36 | Elaborar Plan Pruebas Integración | 2022-02-15 → 2021-12-24 (-53d) | 2022-03-01 → 2021-12-31 (-60d) |  | 17.98d → 18.98d |  |
| 37 | Ejecutar Plan Pruebas Integración | 2022-03-15 → 2022-01-05 (-69d) | 2022-03-22 → 2022-01-10 (-71d) |  |  |  |
| 38 | Test de Usabilidad | 2022-03-24 → 2022-01-10 (-73d) | 2022-03-29 → 2022-01-11 (-77d) |  |  |  |
| 39 | Preparar Paquete de Instalación | 2022-03-24 → 2022-01-10 (-73d) | 2022-03-24 → 2022-01-10 (-73d) |  |  |  |
| 40 | Actualizar Doc. Usuario | 2022-03-31 → 2022-01-12 (-78d) | 2022-04-05 → 2022-01-14 (-81d) |  |  |  |
| 41 | Elaborar Plan Instalación & Formación | 2022-04-14 → 2022-01-19 (-85d) | 2022-04-21 → 2022-01-20 (-91d) |  |  |  |
| 42 | Subcontrata Instalación Infraestructura Cliente INICIO | 2022-04-21 → 2022-01-20 (-91d) | 2022-04-21 → 2022-01-20 (-91d) |  |  |  |
| 43 | Subcontrata Instalación Infraestructura Cliente FIN | 2022-04-21 → 2022-01-20 (-91d) | 2022-04-21 → 2022-01-20 (-91d) |  |  |  |
| 44 | Instalación de Cliente | 2022-04-21 → 2022-01-20 (-91d) | 2022-04-26 → 2022-01-24 (-92d) |  |  |  |
| 45 | Formación | 2022-04-26 → 2022-01-24 (-92d) | 2022-05-03 → 2022-01-26 (-97d) |  |  |  |

## Version 7 (saved 2021-10-18, file Modelado de recursos.mpp)

Last finish 2022-01-26 → 2022-01-31 (+5d).

Added:

| ID | Task | Duration | Start | Finish | Resources |
| --- | --- | --- | --- | --- | --- |
| 34 | **Servidor Amazon** | 1.88d? | 2022-01-06 | 2022-01-10 | AMZN [1%] |
| 38 | **Servidor Amazon** | 2.5d? | 2022-01-03 | 2022-01-06 | AMZN [1%] |
| 40 | **Finalización** | 16.98d? | 2022-01-06 | 2022-01-31 |  |

Changed:

| ID | Task | Start | Finish | Duration | Total float | Predecessors | Other |
| --- | --- | --- | --- | --- | --- | --- | --- |
| 4 | Solicitar Presupuesto FIN |  |  |  | 5d → 0d | 3 → 3FS+5d |  |
| 7 | Instalación y Configuración FIN |  |  |  |  | 6 → 6FS+5d |  |
| 10 | Elaborar ERS |  |  |  |  |  | resources A1; A2 → A1; A2; Papel [10000%]; Toner [10000%] |
| 12 | Elaborar Doc. Usuario |  |  |  |  |  | resources A1; A2 → A1; A2; Papel [10000%]; Toner [10000%] |
| 20 | Elaborar Doc. Técnico Diseño |  |  |  |  |  | resources D1; D2 → D1; D2; Papel [10000%]; Toner [10000%] |
| 21 | Revisión Técnica de Diseño Software (RDS) |  |  |  |  |  | resources none → D1; D2 |
| 22 | Actualizar Doc. Usuario |  |  |  |  |  | resources D1; D2 → D1; D2; Papel [10000%]; Toner [10000%] |
| 23 | **Implementación** | 2021-12-30 → 2021-12-28 (-2d) | 2022-01-05 → 2022-01-03 (-2d) |  |  |  |  |
| 25 | Implementar Unidades | 2021-12-30 → 2021-12-28 (-2d) | 2022-01-05 → 2022-01-03 (-2d) |  |  | 24SS → 22SS |  |
| 26 | Documentar Unidades | 2021-12-30 → 2021-12-28 (-2d) | 2022-01-03 → 2021-12-30 (-4d) |  |  |  |  |
| 27 | **Pruebas de Unidad** | 2021-12-30 → 2021-12-28 (-2d) | 2022-01-04 → 2021-12-31 (-4d) |  |  |  |  |
| 28 | Ejecutar Pruebas de Unidad | 2021-12-30 → 2021-12-28 (-2d) | 2022-01-04 → 2021-12-31 (-4d) |  |  |  |  |
| 29 | **Pruebas de Aceptación** |  | 2022-01-19 → 2022-01-17 (-2d) | 35.73d? → 33.73d? | 5d → 10d |  |  |
| 30 | Elaborar Plan Pruebas Aceptación |  |  |  | 38.73d → 40.73d | 11 → 12SS, 11 |  |
| 31 | Ejecutar Plan Pruebas Aceptación | 2022-01-14 → 2022-01-12 (-2d) | 2022-01-19 → 2022-01-17 (-2d) |  |  |  |  |
| 32 | **Pruebas de Sistema** |  | 2022-01-12 → 2022-01-10 (-2d) | 20.48d? → 18.48d? | 9.5d → 14.5d |  |  |
| 35 | Ejecutar Plan Pruebas Sistema | 2022-01-10 → 2022-01-06 (-4d) | 2022-01-12 → 2022-01-10 (-2d) |  |  |  |  |
| 36 | **Pruebas de Integración** |  | 2022-01-10 → 2022-01-06 (-4d) | 10.5d? → 8.5d? | 8d → 6d |  |  |
| 39 | Ejecutar Plan Pruebas Integración | 2022-01-05 → 2022-01-03 (-2d) | 2022-01-10 → 2022-01-06 (-4d) |  |  |  |  |
| 41 | Test de Usabilidad | 2022-01-10 → 2022-01-06 (-4d) | 2022-01-11 → 2022-01-07 (-4d) |  |  |  |  |
| 42 | Preparar Paquete de Instalación | 2022-01-10 → 2022-01-06 (-4d) | 2022-01-10 → 2022-01-06 (-4d) |  |  |  |  |
| 43 | Actualizar Doc. Usuario | 2022-01-12 → 2022-01-10 (-2d) | 2022-01-14 → 2022-01-12 (-2d) |  |  |  | resources D1; D2 → D1; D2; Papel [10000%]; Toner [10000%] |
| 44 | Elaborar Plan Instalación & Formación | 2022-01-19 → 2022-01-17 (-2d) | 2022-01-20 → 2022-01-18 (-2d) |  |  |  |  |
| 45 | Subcontrata Instalación Infraestructura Cliente INICIO | 2022-01-20 → 2022-01-18 (-2d) | 2022-01-20 → 2022-01-18 (-2d) |  | 1.5d → 0d |  |  |
| 46 | Subcontrata Instalación Infraestructura Cliente FIN | 2022-01-20 → 2022-01-25 (+5d) | 2022-01-20 → 2022-01-25 (+5d) |  | 1.5d → 0d | 45 → 45FS+40h |  |
| 47 | Instalación de Cliente | 2022-01-20 → 2022-01-25 (+5d) | 2022-01-24 → 2022-01-27 (+3d) |  |  | 44 → 46 | resources DS1; DS2; DS3; DS4; DS5 → DS1; DS2; DS3; DS4; DS5; Transporte [0.1%] |
| 48 | Formación | 2022-01-24 → 2022-01-27 (+3d) | 2022-01-26 → 2022-01-31 (+5d) |  |  | 46, 47 → 47 | resources none → DS1; DS2; DS3; DS4; DS5 |

## Version 8 (saved 2021-10-28, file Linea Base 28-10-21.mpp)

Last finish 2022-01-31 → 2022-02-24 (+24d).

Added:

| ID | Task | Duration | Start | Finish | Predecessors | Resources |
| --- | --- | --- | --- | --- | --- | --- |
| 17 | Elaborar Doc. Técnico Diseño 1 | 6.25d? | 2021-12-07 | 2021-12-15 | 16SS | D1 [20%]; Papel [1300%]; Toner [1300%] |
| 18 | Elaborar Arquitectura (diseño alto nivel) II | 12.5d? | 2021-12-15 | 2022-01-03 | 16 | D1 [40%] |
| 19 | Elaborar Doc. Técnico Diseño 2 | 12.5d? | 2021-12-15 | 2022-01-03 | 18SS | D1 [10%]; Papel [1200%]; Toner [1200%] |
| 21 | Elaborar Doc. Técnico Diseño 3 | 6.25d? | 2021-12-07 | 2021-12-15 | 20SS | D2 [20%]; Papel [1300%]; Toner [1300%] |
| 22 | Diseño BBDD (diseño alto nivel) II | 12.5d? | 2021-12-15 | 2022-01-03 | 20 | D2 [40%] |
| 23 | Elaborar Doc. Técnico Diseño 4 | 12.5d? | 2021-12-15 | 2022-01-03 | 22SS | D2 [10%]; Papel [1200%]; Toner [1200%] |
| 27 | Detalle Componentes (diseño bajo nivel) II | 6.25d? | 2022-01-03 | 2022-01-11 | 25, 18, 22 | D1 [80%]; D2 [80%] |
| 28 | Elaborar Doc. Técnico Diseño 6 | 6.25d? | 2022-01-03 | 2022-01-11 | 27SS | D1 [20%]; D2 [20%]; Papel [2500%]; Toner [2500%] |
| 34 | Implementar Unidades II | 4d? | 2022-01-24 | 2022-01-28 | 33 | DS1 [50%]; DS2 [50%]; DS3 [50%]; DS4 [50%]; DS5 [50%] |
| 36 | Documentar Unidades II | 4d? | 2022-01-24 | 2022-01-28 | 35 | DS1 [20%]; DS2 [20%]; DS3 [20%]; DS4 [20%]; DS5 [20%] |
| 39 | Ejecutar Pruebas de Unidad II | 4d? | 2022-01-24 | 2022-01-28 | 38 | DS1 [30%]; DS2 [30%]; DS3 [30%]; DS4 [30%]; DS5 [30%] |
| 47 | Ejecutar Plan Pruebas Sistema II | 1.38d? | 2022-02-03 | 2022-02-04 | 46 | T1; T2 |

Changed:

| ID | Task | Start | Finish | Duration | Total float | Predecessors | Other |
| --- | --- | --- | --- | --- | --- | --- | --- |
| 1 | **Fase 0** |  |  | 13d? → 12.25d? |  |  | baseline start none → 2021-11-02; baseline finish none → 2021-11-18 |
| 2 | Adquisición de Productos |  |  | 0.5d? → 0.25d? | 28.25d → 0d |  | resources A1 [50%]; A2 [50%] → A1; A2; baseline start none → 2021-11-02; baseline finish none → 2021-11-02 |
| 3 | Solicitar Presupuesto INICIO |  |  |  | 0.5d → 0d |  | baseline start none → 2021-11-02; baseline finish none → 2021-11-02 |
| 4 | Solicitar Presupuesto FIN |  |  |  |  |  | constraint finish no earlier than 2021-11-09 → none; baseline start none → 2021-11-09; baseline finish none → 2021-11-09 |
| 5 | Seleccionar Proveedor de cada Producto | 2021-11-10 → 2021-11-09 (-1d) |  |  |  |  | baseline start none → 2021-11-09; baseline finish none → 2021-11-10 |
| 6 | Instalación y Configuración INICIO |  |  |  |  |  | baseline start none → 2021-11-10; baseline finish none → 2021-11-10 |
| 7 | Instalación y Configuración FIN |  |  |  |  |  | constraint finish no earlier than 2021-11-17 → none; baseline start none → 2021-11-17; baseline finish none → 2021-11-17 |
| 8 | Revisión del Equipamiento | 2021-11-18 → 2021-11-17 (-1d) |  |  |  |  | baseline start none → 2021-11-17; baseline finish none → 2021-11-18 |
| 9 | **Análisis** | 2021-11-19 → 2021-11-18 (-1d) | 2021-12-08 → 2021-12-07 (-1d) |  |  |  | baseline start none → 2021-11-18; baseline finish none → 2021-12-07 |
| 10 | Elaborar ERS | 2021-11-19 → 2021-11-18 (-1d) | 2021-11-29 → 2021-11-26 (-3d) |  |  |  | baseline start none → 2021-11-18; baseline finish none → 2021-11-26 |
| 11 | Supervisión ERS | 2021-11-29 → 2021-11-26 (-3d) | 2021-11-30 → 2021-11-29 (-1d) |  |  |  | baseline start none → 2021-11-26; baseline finish none → 2021-11-29 |
| 12 | Elaborar Doc. Usuario | 2021-11-30 → 2021-11-29 (-1d) | 2021-12-06 → 2021-12-03 (-3d) |  |  |  | baseline start none → 2021-11-29; baseline finish none → 2021-12-03 |
| 13 | Peer Review de Requisitos | 2021-12-06 → 2021-12-03 (-3d) | 2021-12-08 → 2021-12-07 (-1d) |  |  |  | baseline start none → 2021-12-03; baseline finish none → 2021-12-07 |
| 14 | **Diseño** | 2021-12-08 → 2021-12-07 (-1d) | 2021-12-30 → 2022-01-17 (+18d) | 16.5d? → 29d? |  |  | baseline start none → 2021-12-07; baseline finish none → 2022-01-17 |
| 15 | **Diseño Alto Nivel** | 2021-12-08 → 2021-12-07 (-1d) | 2021-12-15 → 2022-01-03 (+19d) | 5d? → 18.75d? |  |  | baseline start none → 2021-12-07; baseline finish none → 2022-01-03 |
| 16 | Elaborar Arquitectura (diseño alto nivel) I | 2021-12-08 → 2021-12-07 (-1d) |  | 5d? → 6.25d? |  |  | was named Elaborar Arquitectura (diseño alto nivel); resources D1; D2 → D1 [80%]; baseline start none → 2021-12-07; baseline finish none → 2021-12-15 |
| 20 | Diseño BBDD (diseño alto nivel) I | 2021-12-08 → 2021-12-07 (-1d) |  | 5d? → 6.25d? |  |  | was named Diseño BBDD (diseño alto nivel); resources D1; D2 → D2 [80%]; baseline start none → 2021-12-07; baseline finish none → 2021-12-15 |
| 24 | **Diseño Bajo Nivel** | 2021-12-10 → 2021-12-15 (+5d) | 2021-12-24 → 2022-01-11 (+18d) | 10d? → 18.75d? |  |  | baseline start none → 2021-12-15; baseline finish none → 2022-01-11 |
| 25 | Detalle Componentes (diseño bajo nivel) I | 2021-12-10 → 2021-12-15 (+5d) | 2021-12-24 → 2022-01-03 (+10d) | 10d? → 12.5d? |  | 20SS+5%, 16SS+5% → 20, 16 | was named Detalle Componentes (diseño bajo nivel); constraint start no earlier than 2021-11-22 → none; resources D1; D2 → D1 [40%]; D2 [40%]; baseline start none → 2021-12-15; baseline finish none → 2022-01-03 |
| 26 | Elaborar Doc. Técnico Diseño 5 | 2021-12-17 → 2021-12-15 (-2d) | 2021-12-24 → 2022-01-03 (+10d) | 5d? → 12.5d? | 0d → 38.62d | 16SS, 25FF → 25SS | was named Elaborar Doc. Técnico Diseño; resources D1; D2; Papel [10000%]; Toner [10000%] → D1 [10%]; D2 [10%]; Papel [2500%]; Toner [2500%]; baseline start none → 2021-12-15; baseline finish none → 2022-01-03 |
| 29 | Revisión Técnica de Diseño Software (RDS) | 2021-12-24 → 2022-01-11 (+18d) | 2021-12-28 → 2022-01-13 (+16d) |  |  | 26 → 27 | baseline start none → 2022-01-11; baseline finish none → 2022-01-13 |
| 30 | Actualizar Doc. Usuario | 2021-12-28 → 2022-01-13 (+16d) | 2021-12-30 → 2022-01-17 (+18d) |  |  |  | baseline start none → 2022-01-13; baseline finish none → 2022-01-17 |
| 31 | **Implementación** | 2021-12-28 → 2022-01-17 (+20d) | 2022-01-03 → 2022-01-28 (+25d) | 4d? → 9d? |  |  | baseline start none → 2022-01-17; baseline finish none → 2022-01-28 |
| 32 | Implementar BBDD | 2021-12-30 → 2022-01-17 (+18d) | 2021-12-31 → 2022-01-24 (+24d) | 1d? → 5d? | 20.48d → 23.38d |  | resources DS1; DS2; DS3; DS4; DS5 → DS1; baseline start none → 2022-01-17; baseline finish none → 2022-01-24 |
| 33 | Implementar Unidades I | 2021-12-28 → 2022-01-17 (+20d) | 2022-01-03 → 2022-01-24 (+21d) | 4d? → 5d? |  | 30SS → 30 | was named Implementar Unidades; resources DS1; DS2; DS3; DS4; DS5 → DS2 [50%]; DS3 [50%]; DS4 [50%]; DS5 [50%]; baseline start none → 2022-01-17; baseline finish none → 2022-01-24 |
| 35 | Documentar Unidades I | 2021-12-28 → 2022-01-17 (+20d) | 2021-12-30 → 2022-01-24 (+25d) | 1.6d? → 5d? | 2.4d → 0d |  | was named Documentar Unidades; resources DS1; DS2; DS3; DS4; DS5 → DS2 [20%]; DS3 [20%]; DS4 [20%]; DS5 [20%]; baseline start none → 2022-01-17; baseline finish none → 2022-01-24 |
| 37 | **Pruebas de Unidad** | 2021-12-28 → 2022-01-17 (+20d) | 2021-12-31 → 2022-01-28 (+28d) | 2.4d? → 9d? | 1.6d → 0d |  | baseline start none → 2022-01-17; baseline finish none → 2022-01-28 |
| 38 | Ejecutar Pruebas de Unidad I | 2021-12-28 → 2022-01-17 (+20d) | 2021-12-31 → 2022-01-24 (+24d) | 2.4d? → 5d? | 1.6d → 0d |  | was named Ejecutar Pruebas de Unidad; resources DS1; DS2; DS3; DS4; DS5 → DS2 [30%]; DS3 [30%]; DS4 [30%]; DS5 [30%]; baseline start none → 2022-01-17; baseline finish none → 2022-01-24 |
| 40 | **Pruebas de Aceptación** | 2021-11-30 → 2021-11-29 (-1d) | 2022-01-17 → 2022-02-10 (+24d) | 33.73d? → 53.12d? | 10d → 0d |  | baseline start none → 2021-11-29; baseline finish none → 2022-02-10 |
| 41 | Elaborar Plan Pruebas Aceptación | 2021-11-30 → 2021-11-29 (-1d) | 2021-12-03 → 2021-12-02 (-1d) |  | 40.73d → 47.12d |  | baseline start none → 2021-11-29; baseline finish none → 2021-12-02 |
| 42 | Ejecutar Plan Pruebas Aceptación | 2022-01-12 → 2022-02-07 (+26d) | 2022-01-17 → 2022-02-10 (+24d) |  |  | 55 → 55, 41 | resources none → T1; baseline start none → 2022-02-07; baseline finish none → 2022-02-10 |
| 43 | **Pruebas de Sistema** | 2021-12-15 → 2022-01-03 (+19d) | 2022-01-10 → 2022-02-04 (+25d) | 18.48d? → 24.12d? | 14.5d → 0d |  | baseline start none → 2022-01-03; baseline finish none → 2022-02-04 |
| 44 | Elaborar Plan Pruebas Sistema | 2021-12-15 → 2022-01-03 (+19d) | 2021-12-20 → 2022-01-06 (+17d) |  | 29.98d → 18.75d | 20, 16 → 22, 18 | baseline start none → 2022-01-03; baseline finish none → 2022-01-06 |
| 45 | **Servidor Amazon** | 2022-01-06 → 2022-02-02 (+27d) | 2022-01-10 → 2022-02-04 (+25d) | 1.88d? → 2.38d? |  |  | baseline start none → 2022-02-02; baseline finish none → 2022-02-04 |
| 46 | Ejecutar Plan Pruebas Sistema I | 2022-01-06 → 2022-02-02 (+27d) | 2022-01-10 → 2022-02-02 (+23d) | 1.88d? → 1d? |  | 54 → 44, 51 | was named Ejecutar Plan Pruebas Sistema; resources T1; T2 → T2; baseline start none → 2022-02-02; baseline finish none → 2022-02-02 |
| 48 | **Pruebas de Integración** | 2021-12-24 → 2022-01-11 (+18d) | 2022-01-06 → 2022-02-01 (+26d) | 8.5d? → 15.5d? | 6d → 0d |  | baseline start none → 2022-01-11; baseline finish none → 2022-02-01 |
| 49 | Elaborar Plan Pruebas Integración | 2021-12-24 → 2022-01-11 (+18d) | 2021-12-31 → 2022-01-17 (+17d) |  | 20.98d → 8.5d | 25 → 27, 28 | baseline start none → 2022-01-11; baseline finish none → 2022-01-17 |
| 50 | **Servidor Amazon** | 2022-01-03 → 2022-01-28 (+25d) | 2022-01-06 → 2022-02-01 (+26d) |  |  |  | baseline start none → 2022-01-28; baseline finish none → 2022-02-01 |
| 51 | Ejecutar Plan Pruebas Integración | 2022-01-03 → 2022-01-28 (+25d) | 2022-01-06 → 2022-02-01 (+26d) |  |  | 38, 35, 33 → 39, 36, 34, 49 | baseline start none → 2022-01-28; baseline finish none → 2022-02-01 |
| 52 | **Finalización** | 2022-01-06 → 2022-02-02 (+27d) | 2022-01-31 → 2022-02-24 (+24d) | 16.98d? → 16.88d? |  |  | baseline start none → 2022-02-02; baseline finish none → 2022-02-24 |
| 53 | Test de Usabilidad | 2022-01-06 → 2022-02-02 (+27d) | 2022-01-07 → 2022-02-02 (+26d) |  | 0.88d → 1.38d | 46SS → 51 | resources none → T1; baseline start none → 2022-02-02; baseline finish none → 2022-02-02 |
| 54 | Preparar Paquete de Instalación | 2022-01-06 → 2022-02-02 (+27d) | 2022-01-06 → 2022-02-02 (+27d) |  | 0d → 16.27d |  | baseline start none → 2022-02-02; baseline finish none → 2022-02-02 |
| 55 | Actualizar Doc. Usuario | 2022-01-10 → 2022-02-04 (+25d) | 2022-01-12 → 2022-02-07 (+26d) |  |  | 46, 53 → 53, 47 | baseline start none → 2022-02-04; baseline finish none → 2022-02-07 |
| 56 | Elaborar Plan Instalación & Formación | 2022-01-17 → 2022-02-10 (+24d) | 2022-01-18 → 2022-02-14 (+27d) |  |  |  | baseline start none → 2022-02-10; baseline finish none → 2022-02-14 |
| 57 | Subcontrata Instalación Infraestructura Cliente INICIO | 2022-01-18 → 2022-02-14 (+27d) | 2022-01-18 → 2022-02-14 (+27d) |  |  |  | baseline start none → 2022-02-14; baseline finish none → 2022-02-14 |
| 58 | Subcontrata Instalación Infraestructura Cliente FIN | 2022-01-25 → 2022-02-21 (+27d) | 2022-01-25 → 2022-02-21 (+27d) |  |  |  | constraint finish no earlier than 2022-01-08 → none; baseline start none → 2022-02-21; baseline finish none → 2022-02-21 |
| 59 | Instalación de Cliente | 2022-01-25 → 2022-02-21 (+27d) | 2022-01-27 → 2022-02-22 (+26d) |  |  |  | baseline start none → 2022-02-21; baseline finish none → 2022-02-22 |
| 60 | Formación | 2022-01-27 → 2022-02-22 (+26d) | 2022-01-31 → 2022-02-24 (+24d) |  |  |  | baseline start none → 2022-02-22; baseline finish none → 2022-02-24 |

## Version 9 (data date 2021-12-27, saved 2021-11-04, file XP 04-11-21.mpp)

Last finish 2022-02-24 → 2022-02-28 (+4d). Complete tasks 0 → 3.

Changed:

| ID | Task | Start | Finish | Complete | Total float |
| --- | --- | --- | --- | --- | --- |
| 1 | **Fase 0** | 2021-11-02 → 2021-11-04 A (+2d) | 2021-11-18 → 2021-11-22 (+4d) | 0% → 11% |  |
| 2 | Adquisición de Productos | 2021-11-02 → 2021-11-04 A (+2d) | 2021-11-02 → 2021-11-04 A (+2d) | 0% → 100% | 0d → none |
| 3 | Solicitar Presupuesto INICIO | 2021-11-02 → 2021-11-04 A (+2d) | 2021-11-02 → 2021-11-04 A (+2d) | 0% → 100% | 0d → none |
| 4 | Solicitar Presupuesto FIN | 2021-11-09 → 2021-11-11 A (+2d) | 2021-11-09 → 2021-11-11 A (+2d) | 0% → 100% | 0d → none |
| 5 | Seleccionar Proveedor de cada Producto | 2021-11-09 → 2021-11-11 (+2d) | 2021-11-10 → 2021-11-12 (+2d) |  |  |
| 6 | Instalación y Configuración INICIO | 2021-11-10 → 2021-11-12 (+2d) | 2021-11-10 → 2021-11-12 (+2d) |  |  |
| 7 | Instalación y Configuración FIN | 2021-11-17 → 2021-11-19 (+2d) | 2021-11-17 → 2021-11-19 (+2d) |  |  |
| 8 | Revisión del Equipamiento | 2021-11-17 → 2021-11-19 (+2d) | 2021-11-18 → 2021-11-22 (+4d) |  |  |
| 9 | **Análisis** | 2021-11-18 → 2021-11-22 (+4d) | 2021-12-07 → 2021-12-09 (+2d) |  |  |
| 10 | Elaborar ERS | 2021-11-18 → 2021-11-22 (+4d) | 2021-11-26 → 2021-11-30 (+4d) |  |  |
| 11 | Supervisión ERS | 2021-11-26 → 2021-11-30 (+4d) | 2021-11-29 → 2021-12-01 (+2d) |  |  |
| 12 | Elaborar Doc. Usuario | 2021-11-29 → 2021-12-01 (+2d) | 2021-12-03 → 2021-12-07 (+4d) |  |  |
| 13 | Peer Review de Requisitos | 2021-12-03 → 2021-12-07 (+4d) | 2021-12-07 → 2021-12-09 (+2d) |  |  |
| 14 | **Diseño** | 2021-12-07 → 2021-12-09 (+2d) | 2022-01-17 → 2022-01-19 (+2d) |  |  |
| 15 | **Diseño Alto Nivel** | 2021-12-07 → 2021-12-09 (+2d) | 2022-01-03 → 2022-01-05 (+2d) |  |  |
| 16 | Elaborar Arquitectura (diseño alto nivel) I | 2021-12-07 → 2021-12-09 (+2d) | 2021-12-15 → 2021-12-17 (+2d) |  |  |
| 17 | Elaborar Doc. Técnico Diseño 1 | 2021-12-07 → 2021-12-09 (+2d) | 2021-12-15 → 2021-12-17 (+2d) |  |  |
| 18 | Elaborar Arquitectura (diseño alto nivel) II | 2021-12-15 → 2021-12-17 (+2d) | 2022-01-03 → 2022-01-05 (+2d) |  |  |
| 19 | Elaborar Doc. Técnico Diseño 2 | 2021-12-15 → 2021-12-17 (+2d) | 2022-01-03 → 2022-01-05 (+2d) |  |  |
| 20 | Diseño BBDD (diseño alto nivel) I | 2021-12-07 → 2021-12-09 (+2d) | 2021-12-15 → 2021-12-17 (+2d) |  |  |
| 21 | Elaborar Doc. Técnico Diseño 3 | 2021-12-07 → 2021-12-09 (+2d) | 2021-12-15 → 2021-12-17 (+2d) |  |  |
| 22 | Diseño BBDD (diseño alto nivel) II | 2021-12-15 → 2021-12-17 (+2d) | 2022-01-03 → 2022-01-05 (+2d) |  |  |
| 23 | Elaborar Doc. Técnico Diseño 4 | 2021-12-15 → 2021-12-17 (+2d) | 2022-01-03 → 2022-01-05 (+2d) |  |  |
| 24 | **Diseño Bajo Nivel** | 2021-12-15 → 2021-12-17 (+2d) | 2022-01-11 → 2022-01-13 (+2d) |  |  |
| 25 | Detalle Componentes (diseño bajo nivel) I | 2021-12-15 → 2021-12-17 (+2d) | 2022-01-03 → 2022-01-05 (+2d) |  |  |
| 26 | Elaborar Doc. Técnico Diseño 5 | 2021-12-15 → 2021-12-17 (+2d) | 2022-01-03 → 2022-01-05 (+2d) |  |  |
| 27 | Detalle Componentes (diseño bajo nivel) II | 2022-01-03 → 2022-01-05 (+2d) | 2022-01-11 → 2022-01-13 (+2d) |  |  |
| 28 | Elaborar Doc. Técnico Diseño 6 | 2022-01-03 → 2022-01-05 (+2d) | 2022-01-11 → 2022-01-13 (+2d) |  |  |
| 29 | Revisión Técnica de Diseño Software (RDS) | 2022-01-11 → 2022-01-13 (+2d) | 2022-01-13 → 2022-01-17 (+4d) |  |  |
| 30 | Actualizar Doc. Usuario | 2022-01-13 → 2022-01-17 (+4d) | 2022-01-17 → 2022-01-19 (+2d) |  |  |
| 31 | **Implementación** | 2022-01-17 → 2022-01-19 (+2d) | 2022-01-28 → 2022-02-01 (+4d) |  |  |
| 32 | Implementar BBDD | 2022-01-17 → 2022-01-19 (+2d) | 2022-01-24 → 2022-01-26 (+2d) |  |  |
| 33 | Implementar Unidades I | 2022-01-17 → 2022-01-19 (+2d) | 2022-01-24 → 2022-01-26 (+2d) |  |  |
| 34 | Implementar Unidades II | 2022-01-24 → 2022-01-26 (+2d) | 2022-01-28 → 2022-02-01 (+4d) |  |  |
| 35 | Documentar Unidades I | 2022-01-17 → 2022-01-19 (+2d) | 2022-01-24 → 2022-01-26 (+2d) |  |  |
| 36 | Documentar Unidades II | 2022-01-24 → 2022-01-26 (+2d) | 2022-01-28 → 2022-02-01 (+4d) |  |  |
| 37 | **Pruebas de Unidad** | 2022-01-17 → 2022-01-19 (+2d) | 2022-01-28 → 2022-02-01 (+4d) |  |  |
| 38 | Ejecutar Pruebas de Unidad I | 2022-01-17 → 2022-01-19 (+2d) | 2022-01-24 → 2022-01-26 (+2d) |  |  |
| 39 | Ejecutar Pruebas de Unidad II | 2022-01-24 → 2022-01-26 (+2d) | 2022-01-28 → 2022-02-01 (+4d) |  |  |
| 40 | **Pruebas de Aceptación** | 2021-11-29 → 2021-12-01 (+2d) | 2022-02-10 → 2022-02-14 (+4d) |  |  |
| 41 | Elaborar Plan Pruebas Aceptación | 2021-11-29 → 2021-12-01 (+2d) | 2021-12-02 → 2021-12-06 (+4d) |  |  |
| 42 | Ejecutar Plan Pruebas Aceptación | 2022-02-07 → 2022-02-09 (+2d) | 2022-02-10 → 2022-02-14 (+4d) |  |  |
| 43 | **Pruebas de Sistema** | 2022-01-03 → 2022-01-05 (+2d) | 2022-02-04 → 2022-02-08 (+4d) |  |  |
| 44 | Elaborar Plan Pruebas Sistema | 2022-01-03 → 2022-01-05 (+2d) | 2022-01-06 → 2022-01-10 (+4d) |  |  |
| 45 | **Servidor Amazon** | 2022-02-02 → 2022-02-04 (+2d) | 2022-02-04 → 2022-02-08 (+4d) |  |  |
| 46 | Ejecutar Plan Pruebas Sistema I | 2022-02-02 → 2022-02-04 (+2d) | 2022-02-02 → 2022-02-04 (+2d) |  |  |
| 47 | Ejecutar Plan Pruebas Sistema II | 2022-02-03 → 2022-02-07 (+4d) | 2022-02-04 → 2022-02-08 (+4d) |  |  |
| 48 | **Pruebas de Integración** | 2022-01-11 → 2022-01-13 (+2d) | 2022-02-01 → 2022-02-03 (+2d) |  |  |
| 49 | Elaborar Plan Pruebas Integración | 2022-01-11 → 2022-01-13 (+2d) | 2022-01-17 → 2022-01-19 (+2d) |  |  |
| 50 | **Servidor Amazon** | 2022-01-28 → 2022-02-01 (+4d) | 2022-02-01 → 2022-02-03 (+2d) |  |  |
| 51 | Ejecutar Plan Pruebas Integración | 2022-01-28 → 2022-02-01 (+4d) | 2022-02-01 → 2022-02-03 (+2d) |  |  |
| 52 | **Finalización** | 2022-02-02 → 2022-02-04 (+2d) | 2022-02-24 → 2022-02-28 (+4d) |  |  |
| 53 | Test de Usabilidad | 2022-02-02 → 2022-02-04 (+2d) | 2022-02-02 → 2022-02-04 (+2d) |  |  |
| 54 | Preparar Paquete de Instalación | 2022-02-02 → 2022-02-04 (+2d) | 2022-02-02 → 2022-02-04 (+2d) |  |  |
| 55 | Actualizar Doc. Usuario | 2022-02-04 → 2022-02-08 (+4d) | 2022-02-07 → 2022-02-09 (+2d) |  |  |
| 56 | Elaborar Plan Instalación & Formación | 2022-02-10 → 2022-02-14 (+4d) | 2022-02-14 → 2022-02-16 (+2d) |  |  |
| 57 | Subcontrata Instalación Infraestructura Cliente INICIO | 2022-02-14 → 2022-02-16 (+2d) | 2022-02-14 → 2022-02-16 (+2d) |  |  |
| 58 | Subcontrata Instalación Infraestructura Cliente FIN | 2022-02-21 → 2022-02-23 (+2d) | 2022-02-21 → 2022-02-23 (+2d) |  |  |
| 59 | Instalación de Cliente | 2022-02-21 → 2022-02-23 (+2d) | 2022-02-22 → 2022-02-24 (+2d) |  |  |
| 60 | Formación | 2022-02-22 → 2022-02-24 (+2d) | 2022-02-24 → 2022-02-28 (+4d) |  |  |

## Version 10 (data date 2021-12-27, saved 2021-11-08, file XP 08-11-21.mpp)

Last finish 2022-02-28 → 2022-03-08 (+8d). Complete tasks 3 → 15.

Changed:

| ID | Task | Start | Finish | Duration | Complete | Total float | Other |
| --- | --- | --- | --- | --- | --- | --- | --- |
| 1 | **Fase 0** | 2021-11-04 A → 2021-11-03 A (-1d) | 2021-11-22 → 2021-11-23 A (+1d) | 12.25d? → 14.12d? | 11% → 100% | 0d → none |  |
| 2 | Adquisición de Productos | 2021-11-04 A → 2021-11-03 A (-1d) | 2021-11-04 A → 2021-11-03 A (-1d) |  |  |  |  |
| 3 | Solicitar Presupuesto INICIO | 2021-11-04 A → 2021-11-03 A (-1d) | 2021-11-04 A → 2021-11-03 A (-1d) |  |  |  |  |
| 4 | Solicitar Presupuesto FIN | 2021-11-11 A → 2021-11-10 A (-1d) | 2021-11-11 A → 2021-11-10 A (-1d) |  |  |  |  |
| 5 | Seleccionar Proveedor de cada Producto | 2021-11-11 → 2021-11-10 A (-1d) | 2021-11-12 → 2021-11-11 A (-1d) | 8h → 7h | 0% → 100% | 0d → none |  |
| 6 | Instalación y Configuración INICIO | 2021-11-12 → 2021-11-11 A (-1d) | 2021-11-12 → 2021-11-11 A (-1d) |  | 0% → 100% | 0d → none |  |
| 7 | Instalación y Configuración FIN | 2021-11-19 → 2021-11-22 A (+3d) | 2021-11-19 → 2021-11-22 A (+3d) |  | 0% → 100% | 0d → none |  |
| 8 | Revisión del Equipamiento | 2021-11-19 → 2021-11-22 A (+3d) | 2021-11-22 → 2021-11-23 A (+1d) |  | 0% → 100% | 0d → none |  |
| 9 | **Análisis** | 2021-11-22 → 2021-11-23 A (+1d) | 2021-12-09 → 2021-12-14 A (+5d) | 13.25d? → 15.75d? | 0% → 100% | 0d → none |  |
| 10 | Elaborar ERS | 2021-11-22 → 2021-11-23 A (+1d) | 2021-11-30 → 2021-12-03 A (+3d) | 6.25d? → 8.75d? | 0% → 100% | 0d → none | resources A1; A2; Papel [10000%]; Toner [10000%] → A1; A2; Papel [30000%]; Toner [30000%] |
| 11 | Supervisión ERS | 2021-11-30 → 2021-12-03 A (+3d) | 2021-12-01 → 2021-12-07 A (+6d) |  | 0% → 100% | 0d → none |  |
| 12 | Elaborar Doc. Usuario | 2021-12-01 → 2021-12-07 A (+6d) | 2021-12-07 → 2021-12-10 A (+3d) |  | 0% → 100% | 0d → none |  |
| 13 | Peer Review de Requisitos | 2021-12-07 → 2021-12-10 A (+3d) | 2021-12-09 → 2021-12-14 A (+5d) |  | 0% → 100% | 0d → none |  |
| 14 | **Diseño** | 2021-12-09 → 2021-12-14 A (+5d) | 2022-01-19 → 2022-01-26 (+7d) | 29d? → 30.88d? | 0% → 26% | 0d → 28.38d |  |
| 15 | **Diseño Alto Nivel** | 2021-12-09 → 2021-12-14 A (+5d) | 2022-01-05 → 2022-01-12 (+7d) | 18.75d? → 20.62d? | 0% → 39% | 0d → 38.62d |  |
| 16 | Elaborar Arquitectura (diseño alto nivel) I | 2021-12-09 → 2021-12-14 A (+5d) | 2021-12-17 → 2021-12-24 A (+7d) | 6.25d? → 8.12d? | 0% → 100% | 0d → none |  |
| 17 | Elaborar Doc. Técnico Diseño 1 | 2021-12-09 → 2021-12-14 A (+5d) | 2021-12-17 → 2021-12-24 A (+7d) | 6.25d? → 8.12d? | 0% → 100% | 51.12d → none |  |
| 18 | Elaborar Arquitectura (diseño alto nivel) II | 2021-12-17 → 2021-12-27 (+10d) | 2022-01-05 → 2022-01-12 (+7d) |  |  |  |  |
| 19 | Elaborar Doc. Técnico Diseño 2 | 2021-12-17 → 2021-12-27 (+10d) | 2022-01-05 → 2022-01-12 (+7d) |  |  |  |  |
| 20 | Diseño BBDD (diseño alto nivel) I | 2021-12-09 → 2021-12-14 A (+5d) | 2021-12-17 → 2021-12-24 A (+7d) | 6.25d? → 8.12d? | 0% → 100% | 0d → none |  |
| 21 | Elaborar Doc. Técnico Diseño 3 | 2021-12-09 → 2021-12-14 A (+5d) | 2021-12-17 → 2021-12-24 A (+7d) | 6.25d? → 8.12d? | 0% → 100% | 51.12d → none |  |
| 22 | Diseño BBDD (diseño alto nivel) II | 2021-12-17 → 2021-12-27 (+10d) | 2022-01-05 → 2022-01-12 (+7d) |  |  |  |  |
| 23 | Elaborar Doc. Técnico Diseño 4 | 2021-12-17 → 2021-12-27 (+10d) | 2022-01-05 → 2022-01-12 (+7d) |  |  |  |  |
| 24 | **Diseño Bajo Nivel** | 2021-12-17 → 2021-12-27 (+10d) | 2022-01-13 → 2022-01-20 (+7d) |  |  |  |  |
| 25 | Detalle Componentes (diseño bajo nivel) I | 2021-12-17 → 2021-12-27 (+10d) | 2022-01-05 → 2022-01-12 (+7d) |  |  |  |  |
| 26 | Elaborar Doc. Técnico Diseño 5 | 2021-12-17 → 2021-12-27 (+10d) | 2022-01-05 → 2022-01-12 (+7d) |  |  |  |  |
| 27 | Detalle Componentes (diseño bajo nivel) II | 2022-01-05 → 2022-01-12 (+7d) | 2022-01-13 → 2022-01-20 (+7d) |  |  |  |  |
| 28 | Elaborar Doc. Técnico Diseño 6 | 2022-01-05 → 2022-01-12 (+7d) | 2022-01-13 → 2022-01-20 (+7d) |  |  |  |  |
| 29 | Revisión Técnica de Diseño Software (RDS) | 2022-01-13 → 2022-01-20 (+7d) | 2022-01-17 → 2022-01-24 (+7d) |  |  |  |  |
| 30 | Actualizar Doc. Usuario | 2022-01-17 → 2022-01-24 (+7d) | 2022-01-19 → 2022-01-26 (+7d) |  |  |  |  |
| 31 | **Implementación** | 2022-01-19 → 2022-01-26 (+7d) | 2022-02-01 → 2022-02-08 (+7d) |  |  |  |  |
| 32 | Implementar BBDD | 2022-01-19 → 2022-01-26 (+7d) | 2022-01-26 → 2022-02-02 (+7d) |  |  |  |  |
| 33 | Implementar Unidades I | 2022-01-19 → 2022-01-26 (+7d) | 2022-01-26 → 2022-02-02 (+7d) |  |  |  |  |
| 34 | Implementar Unidades II | 2022-01-26 → 2022-02-02 (+7d) | 2022-02-01 → 2022-02-08 (+7d) |  |  |  |  |
| 35 | Documentar Unidades I | 2022-01-19 → 2022-01-26 (+7d) | 2022-01-26 → 2022-02-02 (+7d) |  |  |  |  |
| 36 | Documentar Unidades II | 2022-01-26 → 2022-02-02 (+7d) | 2022-02-01 → 2022-02-08 (+7d) |  |  |  |  |
| 37 | **Pruebas de Unidad** | 2022-01-19 → 2022-01-26 (+7d) | 2022-02-01 → 2022-02-08 (+7d) |  |  |  |  |
| 38 | Ejecutar Pruebas de Unidad I | 2022-01-19 → 2022-01-26 (+7d) | 2022-01-26 → 2022-02-02 (+7d) |  |  |  |  |
| 39 | Ejecutar Pruebas de Unidad II | 2022-01-26 → 2022-02-02 (+7d) | 2022-02-01 → 2022-02-08 (+7d) |  |  |  |  |
| 40 | **Pruebas de Aceptación** | 2021-12-01 → 2021-12-07 (+6d) | 2022-02-14 → 2022-02-22 (+8d) | 53.12d? → 55d? |  |  |  |
| 41 | Elaborar Plan Pruebas Aceptación | 2021-12-01 → 2021-12-07 (+6d) | 2021-12-06 → 2021-12-10 (+4d) |  |  |  |  |
| 42 | Ejecutar Plan Pruebas Aceptación | 2022-02-09 → 2022-02-17 (+8d) | 2022-02-14 → 2022-02-22 (+8d) |  |  |  |  |
| 43 | **Pruebas de Sistema** | 2022-01-05 → 2022-01-12 (+7d) | 2022-02-08 → 2022-02-15 (+7d) |  |  |  |  |
| 44 | Elaborar Plan Pruebas Sistema | 2022-01-05 → 2022-01-12 (+7d) | 2022-01-10 → 2022-01-17 (+7d) |  |  |  |  |
| 45 | **Servidor Amazon** | 2022-02-04 → 2022-02-11 (+7d) | 2022-02-08 → 2022-02-15 (+7d) |  |  |  |  |
| 46 | Ejecutar Plan Pruebas Sistema I | 2022-02-04 → 2022-02-11 (+7d) | 2022-02-04 → 2022-02-14 (+10d) |  |  |  |  |
| 47 | Ejecutar Plan Pruebas Sistema II | 2022-02-07 → 2022-02-14 (+7d) | 2022-02-08 → 2022-02-15 (+7d) |  |  |  |  |
| 48 | **Pruebas de Integración** | 2022-01-13 → 2022-01-20 (+7d) | 2022-02-03 → 2022-02-11 (+8d) |  |  |  |  |
| 49 | Elaborar Plan Pruebas Integración | 2022-01-13 → 2022-01-20 (+7d) | 2022-01-19 → 2022-01-27 (+8d) |  |  |  |  |
| 50 | **Servidor Amazon** | 2022-02-01 → 2022-02-08 (+7d) | 2022-02-03 → 2022-02-11 (+8d) |  |  |  |  |
| 51 | Ejecutar Plan Pruebas Integración | 2022-02-01 → 2022-02-08 (+7d) | 2022-02-03 → 2022-02-11 (+8d) |  |  |  |  |
| 52 | **Finalización** | 2022-02-04 → 2022-02-11 (+7d) | 2022-02-28 → 2022-03-08 (+8d) |  |  |  |  |
| 53 | Test de Usabilidad | 2022-02-04 → 2022-02-11 (+7d) | 2022-02-04 → 2022-02-14 (+10d) |  |  |  |  |
| 54 | Preparar Paquete de Instalación | 2022-02-04 → 2022-02-11 (+7d) | 2022-02-04 → 2022-02-11 (+7d) |  |  |  |  |
| 55 | Actualizar Doc. Usuario | 2022-02-08 → 2022-02-15 (+7d) | 2022-02-09 → 2022-02-17 (+8d) |  |  |  |  |
| 56 | Elaborar Plan Instalación & Formación | 2022-02-14 → 2022-02-22 (+8d) | 2022-02-16 → 2022-02-23 (+7d) |  |  |  |  |
| 57 | Subcontrata Instalación Infraestructura Cliente INICIO | 2022-02-16 → 2022-02-23 (+7d) | 2022-02-16 → 2022-02-23 (+7d) |  |  |  |  |
| 58 | Subcontrata Instalación Infraestructura Cliente FIN | 2022-02-23 → 2022-03-02 (+7d) | 2022-02-23 → 2022-03-02 (+7d) |  |  |  |  |
| 59 | Instalación de Cliente | 2022-02-23 → 2022-03-02 (+7d) | 2022-02-24 → 2022-03-04 (+8d) |  |  |  |  |
| 60 | Formación | 2022-02-24 → 2022-03-04 (+8d) | 2022-02-28 → 2022-03-08 (+8d) |  |  |  |  |

## Version 11 (data date 2022-03-17, saved 2021-11-09, file XP 09-11-21.mpp)

Last finish 2022-03-08 → 2022-03-17 (+9d). Complete tasks 15 → 47.

Changed:

| ID | Task | Start | Finish | Duration | Complete | Total float | Predecessors | Other |
| --- | --- | --- | --- | --- | --- | --- | --- | --- |
| 1 | **Fase 0** |  |  | 14.12d? → 14.38d? |  |  |  |  |
| 4 | Solicitar Presupuesto FIN | 2021-11-10 A → 2021-11-12 A (+2d) | 2021-11-10 A → 2021-11-12 A (+2d) |  |  |  |  |  |
| 5 | Seleccionar Proveedor de cada Producto | 2021-11-10 A → 2021-11-12 A (+2d) | 2021-11-11 A → 2021-11-15 A (+4d) | 7h → 9h |  |  |  |  |
| 6 | Instalación y Configuración INICIO | 2021-11-11 A → 2021-11-15 A (+4d) | 2021-11-11 A → 2021-11-15 A (+4d) |  |  |  |  |  |
| 9 | **Análisis** |  | 2021-12-14 A → 2021-12-13 A (-1d) | 15.75d? → 14.5d? |  |  |  |  |
| 10 | Elaborar ERS |  | 2021-12-03 A → 2021-12-02 A (-1d) | 8.75d? → 7.5d? |  |  |  | resources A1; A2; Papel [30000%]; Toner [30000%] → A1; A2; Papel [10000%]; Toner [10000%] |
| 11 | Supervisión ERS | 2021-12-03 A → 2021-12-02 A (-1d) | 2021-12-07 A → 2021-12-06 A (-1d) |  |  |  |  |  |
| 12 | Elaborar Doc. Usuario | 2021-12-07 A → 2021-12-06 A (-1d) | 2021-12-10 A → 2021-12-09 A (-1d) | 3.75d? → 3.25d? |  |  |  |  |
| 13 | Peer Review de Requisitos | 2021-12-10 A → 2021-12-09 A (-1d) | 2021-12-14 A → 2021-12-13 A (-1d) |  |  |  |  |  |
| 14 | **Diseño** | 2021-12-14 A → 2021-12-13 A (-1d) | 2022-01-26 → 2022-01-25 A (-1d) | 30.88d? → 30.38d? | 26% → 100% | 28.38d → none |  |  |
| 15 | **Diseño Alto Nivel** | 2021-12-14 A → 2021-12-13 A (-1d) | 2022-01-12 → 2022-01-11 A (-1d) | 20.62d? → 20.88d? | 39% → 100% | 38.62d → none |  |  |
| 16 | Elaborar Arquitectura (diseño alto nivel) I | 2021-12-14 A → 2021-12-20 A (+6d) | 2021-12-24 A → 2021-12-28 A (+4d) | 8.12d? → 6.25d? |  |  |  |  |
| 17 | Elaborar Doc. Técnico Diseño 1 | 2021-12-14 A → 2021-12-20 A (+6d) | 2021-12-24 A → 2021-12-28 A (+4d) | 8.12d? → 6.25d? |  |  |  |  |
| 18 | Elaborar Arquitectura (diseño alto nivel) II | 2021-12-27 → 2021-12-28 A (+1d) | 2022-01-12 → 2022-01-11 A (-1d) |  | 0% → 100% | 0d → none |  |  |
| 19 | Elaborar Doc. Técnico Diseño 2 | 2021-12-27 → 2021-12-28 A (+1d) | 2022-01-12 → 2022-01-11 A (-1d) |  | 0% → 100% | 38.62d → none |  |  |
| 20 | Diseño BBDD (diseño alto nivel) I | 2021-12-14 A → 2021-12-13 A (-1d) | 2021-12-24 A → 2021-12-22 A (-2d) | 8.12d? → 6.25d? |  |  | 16SS → 13 |  |
| 21 | Elaborar Doc. Técnico Diseño 3 | 2021-12-14 A → 2021-12-13 A (-1d) | 2021-12-24 A → 2021-12-22 A (-2d) | 8.12d? → 6.25d? |  |  |  |  |
| 22 | Diseño BBDD (diseño alto nivel) II | 2021-12-27 → 2021-12-22 A (-5d) | 2022-01-12 → 2022-01-07 A (-5d) |  | 0% → 100% | 0d → none |  |  |
| 23 | Elaborar Doc. Técnico Diseño 4 | 2021-12-27 → 2021-12-22 A (-5d) | 2022-01-12 → 2022-01-07 A (-5d) |  | 0% → 100% | 38.62d → none |  |  |
| 24 | **Diseño Bajo Nivel** | 2021-12-27 → 2021-12-28 A (+1d) | 2022-01-20 → 2022-01-19 A (-1d) | 18.75d? → 16.67d? | 0% → 100% | 0d → none |  |  |
| 25 | Detalle Componentes (diseño bajo nivel) I | 2021-12-27 → 2021-12-28 A (+1d) | 2022-01-12 → 2022-01-13 A (+1d) | 12.5d? → 14.5d? | 0% → 100% | 0d → none |  |  |
| 26 | Elaborar Doc. Técnico Diseño 5 | 2021-12-27 → 2021-12-28 A (+1d) | 2022-01-12 → 2022-01-13 A (+1d) | 12.5d? → 14.5d? | 0% → 100% | 38.62d → none |  |  |
| 27 | Detalle Componentes (diseño bajo nivel) II | 2022-01-12 → 2022-01-13 A (+1d) | 2022-01-20 → 2022-01-19 A (-1d) | 6.25d? → 4.17d? | 0% → 100% | 0d → none |  | resources D1 [80%]; D2 [80%] → D1 [80%]; D2 [80%]; D3 [80%] |
| 28 | Elaborar Doc. Técnico Diseño 6 | 2022-01-12 → 2022-01-13 A (+1d) | 2022-01-20 → 2022-01-19 A (-1d) | 6.25d? → 4.17d? | 0% → 100% | 8.5d → none |  | resources D1 [20%]; D2 [20%]; Papel [2500%]; Toner [2500%] → D1 [20%]; D2 [20%]; Papel [2500%]; Toner [2500%]; D3 [20%] |
| 29 | Revisión Técnica de Diseño Software (RDS) | 2022-01-20 → 2022-01-19 A (-1d) | 2022-01-24 → 2022-01-21 A (-3d) |  | 0% → 100% | 0d → none |  |  |
| 30 | Actualizar Doc. Usuario | 2022-01-24 → 2022-01-21 A (-3d) | 2022-01-26 → 2022-01-25 A (-1d) | 2d? → 1.33d? | 0% → 100% | 0d → none |  | resources D1; D2; Papel [10000%]; Toner [10000%] → D1; D2; Papel [10000%]; Toner [10000%]; D3 |
| 31 | **Implementación** | 2022-01-26 → 2022-02-09 A (+14d) | 2022-02-08 → 2022-02-17 A (+9d) | 9d? → 6.43d? | 0% → 100% | 0d → none |  |  |
| 32 | Implementar BBDD | 2022-01-26 → 2022-02-09 A (+14d) | 2022-02-02 → 2022-02-11 A (+9d) | 5d? → 2.5d? | 0% → 100% | 23.38d → none |  | resources DS1 → DS1; DS6 |
| 33 | Implementar Unidades I | 2022-01-26 → 2022-02-09 A (+14d) | 2022-02-02 → 2022-02-11 A (+9d) | 5d? → 2.5d | 0% → 100% | 0d → none |  | resources DS2 [50%]; DS3 [50%]; DS4 [50%]; DS5 [50%] → DS2 [50%]; DS3 [50%]; DS4 [50%]; DS5 [50%]; DS7 [50%] |
| 34 | Implementar Unidades II | 2022-02-02 → 2022-02-11 A (+9d) | 2022-02-08 → 2022-02-17 A (+9d) | 4d? → 3.93d? | 0% → 100% | 0d → none |  | resources DS1 [50%]; DS2 [50%]; DS3 [50%]; DS4 [50%]; DS5 [50%] → DS1 [50%]; DS2 [50%]; DS3 [50%]; DS4 [50%]; DS5 [50%]; DS6 [50%]; DS7 [50%] |
| 35 | Documentar Unidades I | 2022-01-26 → 2022-02-09 A (+14d) | 2022-02-02 → 2022-02-11 A (+9d) | 5d? → 2.5d | 0% → 100% | 0d → none |  | resources DS2 [20%]; DS3 [20%]; DS4 [20%]; DS5 [20%] → DS2 [20%]; DS3 [20%]; DS4 [20%]; DS5 [20%]; DS7 [20%] |
| 36 | Documentar Unidades II | 2022-02-02 → 2022-02-11 A (+9d) | 2022-02-08 → 2022-02-17 A (+9d) | 4d? → 3.93d? | 0% → 100% | 0d → none |  | resources DS1 [20%]; DS2 [20%]; DS3 [20%]; DS4 [20%]; DS5 [20%] → DS1 [20%]; DS2 [20%]; DS3 [20%]; DS4 [20%]; DS5 [20%]; DS6 [20%]; DS7 [20%] |
| 37 | **Pruebas de Unidad** | 2022-01-26 → 2022-02-09 A (+14d) | 2022-02-08 → 2022-02-17 A (+9d) | 9d? → 6.43d? | 0% → 100% | 0d → none |  |  |
| 38 | Ejecutar Pruebas de Unidad I | 2022-01-26 → 2022-02-09 A (+14d) | 2022-02-02 → 2022-02-11 A (+9d) | 5d? → 2.5d | 0% → 100% | 0d → none |  | resources DS2 [30%]; DS3 [30%]; DS4 [30%]; DS5 [30%] → DS2 [30%]; DS3 [30%]; DS4 [30%]; DS5 [30%]; DS7 [30%] |
| 39 | Ejecutar Pruebas de Unidad II | 2022-02-02 → 2022-02-11 A (+9d) | 2022-02-08 → 2022-02-17 A (+9d) | 4d? → 3.93d? | 0% → 100% | 0d → none |  | resources DS1 [30%]; DS2 [30%]; DS3 [30%]; DS4 [30%]; DS5 [30%] → DS1 [30%]; DS2 [30%]; DS3 [30%]; DS4 [30%]; DS5 [30%]; DS6 [30%]; DS7 [30%] |
| 40 | **Pruebas de Aceptación** | 2021-12-07 → 2021-12-06 A (-1d) | 2022-02-22 → 2022-03-03 A (+9d) | 55d? → 63.75d? | 0% → 100% | 0d → none |  |  |
| 41 | Elaborar Plan Pruebas Aceptación | 2021-12-07 → 2021-12-06 A (-1d) | 2021-12-10 → 2021-12-09 A (-1d) |  | 0% → 100% | 47.12d → none |  |  |
| 42 | Ejecutar Plan Pruebas Aceptación | 2022-02-17 → 2022-02-28 A (+11d) | 2022-02-22 → 2022-03-03 A (+9d) |  | 0% → 100% | 0d → none |  |  |
| 43 | **Pruebas de Sistema** | 2022-01-12 → 2022-01-11 A (-1d) | 2022-02-15 → 2022-02-25 A (+10d) | 24.12d? → 33.12d? | 0% → 100% | 0d → none |  |  |
| 44 | Elaborar Plan Pruebas Sistema | 2022-01-12 → 2022-01-11 A (-1d) | 2022-01-17 → 2022-01-14 A (-3d) |  | 0% → 100% | 18.75d → none |  |  |
| 45 | **Servidor Amazon** | 2022-02-11 → 2022-02-23 A (+12d) | 2022-02-15 → 2022-02-25 A (+10d) |  | 0% → 100% | 0d → none |  |  |
| 46 | Ejecutar Plan Pruebas Sistema I | 2022-02-11 → 2022-02-23 A (+12d) | 2022-02-14 → 2022-02-24 A (+10d) |  | 0% → 100% | 0d → none |  |  |
| 47 | Ejecutar Plan Pruebas Sistema II | 2022-02-14 → 2022-02-24 A (+10d) | 2022-02-15 → 2022-02-25 A (+10d) |  | 0% → 100% | 0d → none |  |  |
| 48 | **Pruebas de Integración** | 2022-01-20 → 2022-01-19 A (-1d) | 2022-02-11 → 2022-02-23 A (+12d) | 15.5d? → 24.58d? | 0% → 100% | 0d → none |  |  |
| 49 | Elaborar Plan Pruebas Integración | 2022-01-20 → 2022-01-19 A (-1d) | 2022-01-27 → 2022-01-26 A (-1d) |  | 0% → 100% | 8.5d → none |  |  |
| 50 | **Servidor Amazon** | 2022-02-08 → 2022-02-17 A (+9d) | 2022-02-11 → 2022-02-23 A (+12d) | 2.5d? → 4.07d? | 0% → 100% | 0d → none |  |  |
| 51 | Ejecutar Plan Pruebas Integración | 2022-02-08 → 2022-02-17 A (+9d) | 2022-02-11 → 2022-02-23 A (+12d) | 2.5d? → 4.07d? | 0% → 100% | 0d → none |  |  |
| 52 | **Finalización** | 2022-02-11 → 2022-02-23 A (+12d) | 2022-03-08 → 2022-03-17 A (+9d) | 16.88d? → 15.88d? | 0% → 100% | 0d → none |  |  |
| 53 | Test de Usabilidad | 2022-02-11 → 2022-02-23 A (+12d) | 2022-02-14 → 2022-02-24 A (+10d) |  | 0% → 100% | 1.38d → none |  |  |
| 54 | Preparar Paquete de Instalación | 2022-02-11 → 2022-02-23 A (+12d) | 2022-02-11 → 2022-02-24 A (+13d) |  | 0% → 100% | 16.27d → none |  |  |
| 55 | Actualizar Doc. Usuario | 2022-02-15 → 2022-02-25 A (+10d) | 2022-02-17 → 2022-02-28 A (+11d) | 1.5d? → 1d? | 0% → 100% | 0d → none |  | resources D1; D2; Papel [10000%]; Toner [10000%] → D1; D2; Papel [10000%]; Toner [10000%]; D3 |
| 56 | Elaborar Plan Instalación & Formación | 2022-02-22 → 2022-03-03 A (+9d) | 2022-02-23 → 2022-03-04 A (+9d) | 1.5d? → 1d? | 0% → 100% | 0d → none |  | resources D1; D2 → D1; D2; D3 |
| 57 | Subcontrata Instalación Infraestructura Cliente INICIO | 2022-02-23 → 2022-03-04 A (+9d) | 2022-02-23 → 2022-03-04 A (+9d) |  | 0% → 100% | 0d → none |  |  |
| 58 | Subcontrata Instalación Infraestructura Cliente FIN | 2022-03-02 → 2022-03-11 A (+9d) | 2022-03-02 → 2022-03-11 A (+9d) |  | 0% → 100% | 0d → none |  |  |
| 59 | Instalación de Cliente | 2022-03-02 → 2022-03-11 A (+9d) | 2022-03-04 → 2022-03-15 A (+11d) |  | 0% → 100% | 0d → none |  | resources DS1; DS2; DS3; DS4; DS5; Transporte [0.1%] → DS1; DS2; DS3; DS4; DS5; Transporte [0.1%]; DS6 |
| 60 | Formación | 2022-03-04 → 2022-03-15 A (+11d) | 2022-03-08 → 2022-03-17 A (+9d) |  | 0% → 100% | 0d → none |  |  |

## Version 12 (data date 2021-12-27, saved 2021-11-10, file Seguimiento 50pc + replanificacion.mpp)

Last finish 2022-03-17 → 2022-02-28 (-17d). Complete tasks 47 → 14.

Changed:

| ID | Task | Start | Finish | Duration | Complete | Total float |
| --- | --- | --- | --- | --- | --- | --- |
| 14 | **Diseño** |  | 2022-01-25 A → 2022-01-25 |  | 100% → 29% | none → 24.55d |
| 15 | **Diseño Alto Nivel** |  | 2022-01-11 A → 2022-01-13 (+2d) | 20.88d? → 22.88d? | 100% → 43% | none → 32.05d |
| 16 | Elaborar Arquitectura (diseño alto nivel) I |  | 2021-12-28 A → 2021-12-28 |  | 100% → 96% | none → 0d |
| 17 | Elaborar Doc. Técnico Diseño 1 |  | 2021-12-28 A → 2021-12-28 |  | 100% → 96% | none → 44.55d |
| 18 | Elaborar Arquitectura (diseño alto nivel) II | 2021-12-28 A → 2021-12-28 | 2022-01-11 A → 2022-01-13 (+2d) |  | 100% → 0% | none → 0d |
| 19 | Elaborar Doc. Técnico Diseño 2 | 2021-12-28 A → 2021-12-28 | 2022-01-11 A → 2022-01-13 (+2d) |  | 100% → 0% | none → 32.05d |
| 22 | Diseño BBDD (diseño alto nivel) II |  | 2022-01-07 A → 2022-01-07 |  | 100% → 31% | none → 4.12d |
| 23 | Elaborar Doc. Técnico Diseño 4 |  | 2022-01-07 A → 2022-01-07 |  | 100% → 31% | none → 36.18d |
| 24 | **Diseño Bajo Nivel** | 2021-12-28 A → 2021-12-28 | 2022-01-19 A → 2022-01-19 |  | 100% → 0% | none → 0d |
| 25 | Detalle Componentes (diseño bajo nivel) I | 2021-12-28 A → 2021-12-28 | 2022-01-13 A → 2022-01-13 | 14.5d? → 12.5d? | 100% → 0% | none → 0d |
| 26 | Elaborar Doc. Técnico Diseño 5 | 2021-12-28 A → 2021-12-28 | 2022-01-13 A → 2022-01-13 | 14.5d? → 12.5d? | 100% → 0% | none → 32.05d |
| 27 | Detalle Componentes (diseño bajo nivel) II | 2022-01-13 A → 2022-01-13 | 2022-01-19 A → 2022-01-19 |  | 100% → 0% | none → 0d |
| 28 | Elaborar Doc. Técnico Diseño 6 | 2022-01-13 A → 2022-01-13 | 2022-01-19 A → 2022-01-19 |  | 100% → 0% | none → 5.26d |
| 29 | Revisión Técnica de Diseño Software (RDS) | 2022-01-19 A → 2022-01-19 | 2022-01-21 A → 2022-01-21 |  | 100% → 0% | none → 0d |
| 30 | Actualizar Doc. Usuario | 2022-01-21 A → 2022-01-21 | 2022-01-25 A → 2022-01-25 |  | 100% → 0% | none → 0d |
| 31 | **Implementación** | 2022-02-09 A → 2022-01-25 (-15d) | 2022-02-17 A → 2022-02-02 (-15d) |  | 100% → 0% | none → 0d |
| 32 | Implementar BBDD | 2022-02-09 A → 2022-01-25 (-15d) | 2022-02-11 A → 2022-01-27 (-15d) |  | 100% → 0% | none → 22.05d |
| 33 | Implementar Unidades I | 2022-02-09 A → 2022-01-25 (-15d) | 2022-02-11 A → 2022-01-27 (-15d) |  | 100% → 0% | none → 0d |
| 34 | Implementar Unidades II | 2022-02-11 A → 2022-01-27 (-15d) | 2022-02-17 A → 2022-02-02 (-15d) |  | 100% → 0% | none → 0d |
| 35 | Documentar Unidades I | 2022-02-09 A → 2022-01-25 (-15d) | 2022-02-11 A → 2022-01-27 (-15d) |  | 100% → 0% | none → 0d |
| 36 | Documentar Unidades II | 2022-02-11 A → 2022-01-27 (-15d) | 2022-02-17 A → 2022-02-02 (-15d) |  | 100% → 0% | none → 0d |
| 37 | **Pruebas de Unidad** | 2022-02-09 A → 2022-01-25 (-15d) | 2022-02-17 A → 2022-02-02 (-15d) |  | 100% → 0% | none → 0d |
| 38 | Ejecutar Pruebas de Unidad I | 2022-02-09 A → 2022-01-25 (-15d) | 2022-02-11 A → 2022-01-27 (-15d) |  | 100% → 0% | none → 0d |
| 39 | Ejecutar Pruebas de Unidad II | 2022-02-11 A → 2022-01-27 (-15d) | 2022-02-17 A → 2022-02-02 (-15d) |  | 100% → 0% | none → 0d |
| 40 | **Pruebas de Aceptación** |  | 2022-03-03 A → 2022-02-15 (-16d) | 63.75d? → 51.43d? | 100% → 50% | none → 0d |
| 42 | Ejecutar Plan Pruebas Aceptación | 2022-02-28 A → 2022-02-10 (-18d) | 2022-03-03 A → 2022-02-15 (-16d) |  | 100% → 0% | none → 0d |
| 43 | **Pruebas de Sistema** | 2022-01-11 A → 2022-01-13 (+2d) | 2022-02-25 A → 2022-02-09 (-16d) | 33.12d? → 18.8d? | 100% → 0% | none → 0d |
| 44 | Elaborar Plan Pruebas Sistema | 2022-01-11 A → 2022-01-13 (+2d) | 2022-01-14 A → 2022-01-18 (+4d) |  | 100% → 0% | none → 13.43d |
| 45 | **Servidor Amazon** | 2022-02-23 A → 2022-02-07 (-16d) | 2022-02-25 A → 2022-02-09 (-16d) |  | 100% → 0% | none → 0d |
| 46 | Ejecutar Plan Pruebas Sistema I | 2022-02-23 A → 2022-02-07 (-16d) | 2022-02-24 A → 2022-02-08 (-16d) |  | 100% → 0% | none → 0d |
| 47 | Ejecutar Plan Pruebas Sistema II | 2022-02-24 A → 2022-02-08 (-16d) | 2022-02-25 A → 2022-02-09 (-16d) |  | 100% → 0% | none → 0d |
| 48 | **Pruebas de Integración** | 2022-01-19 A → 2022-01-19 | 2022-02-23 A → 2022-02-07 (-16d) | 24.58d? → 12.26d? | 100% → 0% | none → 0d |
| 49 | Elaborar Plan Pruebas Integración | 2022-01-19 A → 2022-01-19 | 2022-01-26 A → 2022-01-26 |  | 100% → 0% | none → 5.26d |
| 50 | **Servidor Amazon** | 2022-02-17 A → 2022-02-02 (-15d) | 2022-02-23 A → 2022-02-07 (-16d) | 4.07d? → 2.5d? | 100% → 0% | none → 0d |
| 51 | Ejecutar Plan Pruebas Integración | 2022-02-17 A → 2022-02-02 (-15d) | 2022-02-23 A → 2022-02-07 (-16d) | 4.07d? → 2.5d? | 100% → 0% | none → 0d |
| 52 | **Finalización** | 2022-02-23 A → 2022-02-07 (-16d) | 2022-03-17 A → 2022-02-28 (-17d) | 15.88d? → 15.62d? | 100% → 0% | none → 0d |
| 53 | Test de Usabilidad | 2022-02-23 A → 2022-02-07 (-16d) | 2022-02-24 A → 2022-02-08 (-16d) |  | 100% → 0% | none → 1.38d |
| 54 | Preparar Paquete de Instalación | 2022-02-23 A → 2022-02-07 (-16d) | 2022-02-24 A → 2022-02-07 (-17d) |  | 100% → 0% | none → 15.03d |
| 55 | Actualizar Doc. Usuario | 2022-02-25 A → 2022-02-09 (-16d) | 2022-02-28 A → 2022-02-10 (-18d) |  | 100% → 0% | none → 0d |
| 56 | Elaborar Plan Instalación & Formación | 2022-03-03 A → 2022-02-15 (-16d) | 2022-03-04 A → 2022-02-16 (-16d) |  | 100% → 0% | none → 0d |
| 57 | Subcontrata Instalación Infraestructura Cliente INICIO | 2022-03-04 A → 2022-02-16 (-16d) | 2022-03-04 A → 2022-02-16 (-16d) |  | 100% → 0% | none → 0d |
| 58 | Subcontrata Instalación Infraestructura Cliente FIN | 2022-03-11 A → 2022-02-23 (-16d) | 2022-03-11 A → 2022-02-23 (-16d) |  | 100% → 0% | none → 0d |
| 59 | Instalación de Cliente | 2022-03-11 A → 2022-02-23 (-16d) | 2022-03-15 A → 2022-02-24 (-19d) | 1.5d? → 1.25d? | 100% → 0% | none → 0d |
| 60 | Formación | 2022-03-15 A → 2022-02-24 (-19d) | 2022-03-17 A → 2022-02-28 (-17d) |  | 100% → 0% | none → 0d |

## Version 13 (data date 2021-12-27, saved 2021-11-10, file Seguimiento 50pc.mpp)

Last finish 2022-02-28 → 2022-03-09 (+9d).

Changed:

| ID | Task | Start | Finish | Duration | Complete | Total float | Other |
| --- | --- | --- | --- | --- | --- | --- | --- |
| 14 | **Diseño** |  | 2022-01-25 → 2022-01-27 (+2d) | 30.38d? → 33.12d? | 29% → 28% | 24.55d → 28.38d |  |
| 24 | **Diseño Bajo Nivel** |  | 2022-01-19 → 2022-01-21 (+2d) | 16.67d? → 18.75d? |  |  |  |
| 27 | Detalle Componentes (diseño bajo nivel) II |  | 2022-01-19 → 2022-01-21 (+2d) | 4.17d? → 6.25d? |  |  | resources D1 [80%]; D2 [80%]; D3 [80%] → D1 [80%]; D2 [80%] |
| 28 | Elaborar Doc. Técnico Diseño 6 |  | 2022-01-19 → 2022-01-21 (+2d) | 4.17d? → 6.25d? |  | 5.26d → 8.5d | resources D1 [20%]; D2 [20%]; Papel [2500%]; Toner [2500%]; D3 [20%] → D1 [20%]; D2 [20%]; Papel [2500%]; Toner [2500%] |
| 29 | Revisión Técnica de Diseño Software (RDS) | 2022-01-19 → 2022-01-24 (+5d) | 2022-01-21 → 2022-01-25 (+4d) |  |  |  |  |
| 30 | Actualizar Doc. Usuario | 2022-01-21 → 2022-01-26 (+5d) | 2022-01-25 → 2022-01-27 (+2d) | 1.33d? → 2d? |  |  | resources D1; D2; Papel [10000%]; Toner [10000%]; D3 → D1; D2; Papel [10000%]; Toner [10000%] |
| 31 | **Implementación** | 2022-01-25 → 2022-01-28 (+3d) | 2022-02-02 → 2022-02-09 (+7d) | 6.43d? → 9d? |  |  |  |
| 32 | Implementar BBDD | 2022-01-25 → 2022-01-28 (+3d) | 2022-01-27 → 2022-02-03 (+7d) | 2.5d? → 5d? |  | 22.05d → 23.38d | resources DS1; DS6 → DS1 |
| 33 | Implementar Unidades I | 2022-01-25 → 2022-01-28 (+3d) | 2022-01-27 → 2022-02-03 (+7d) | 2.5d → 5d? |  |  | resources DS2 [50%]; DS3 [50%]; DS4 [50%]; DS5 [50%]; DS7 [50%] → DS2 [50%]; DS3 [50%]; DS4 [50%]; DS5 [50%] |
| 34 | Implementar Unidades II | 2022-01-27 → 2022-02-04 (+8d) | 2022-02-02 → 2022-02-09 (+7d) | 3.93d? → 4d? |  |  | resources DS1 [50%]; DS2 [50%]; DS3 [50%]; DS4 [50%]; DS5 [50%]; DS6 [50%]; DS7 [50%] → DS1 [50%]; DS2 [50%]; DS3 [50%]; DS4 [50%]; DS5 [50%] |
| 35 | Documentar Unidades I | 2022-01-25 → 2022-01-28 (+3d) | 2022-01-27 → 2022-02-03 (+7d) | 2.5d → 5d? |  |  | resources DS2 [20%]; DS3 [20%]; DS4 [20%]; DS5 [20%]; DS7 [20%] → DS2 [20%]; DS3 [20%]; DS4 [20%]; DS5 [20%] |
| 36 | Documentar Unidades II | 2022-01-27 → 2022-02-04 (+8d) | 2022-02-02 → 2022-02-09 (+7d) | 3.93d? → 4d? |  |  | resources DS1 [20%]; DS2 [20%]; DS3 [20%]; DS4 [20%]; DS5 [20%]; DS6 [20%]; DS7 [20%] → DS1 [20%]; DS2 [20%]; DS3 [20%]; DS4 [20%]; DS5 [20%] |
| 37 | **Pruebas de Unidad** | 2022-01-25 → 2022-01-28 (+3d) | 2022-02-02 → 2022-02-09 (+7d) | 6.43d? → 9d? |  |  |  |
| 38 | Ejecutar Pruebas de Unidad I | 2022-01-25 → 2022-01-28 (+3d) | 2022-01-27 → 2022-02-03 (+7d) | 2.5d → 5d? |  |  | resources DS2 [30%]; DS3 [30%]; DS4 [30%]; DS5 [30%]; DS7 [30%] → DS2 [30%]; DS3 [30%]; DS4 [30%]; DS5 [30%] |
| 39 | Ejecutar Pruebas de Unidad II | 2022-01-27 → 2022-02-04 (+8d) | 2022-02-02 → 2022-02-09 (+7d) | 3.93d? → 4d? |  |  | resources DS1 [30%]; DS2 [30%]; DS3 [30%]; DS4 [30%]; DS5 [30%]; DS6 [30%]; DS7 [30%] → DS1 [30%]; DS2 [30%]; DS3 [30%]; DS4 [30%]; DS5 [30%] |
| 40 | **Pruebas de Aceptación** |  | 2022-02-15 → 2022-02-23 (+8d) | 51.43d? → 57.25d? |  |  |  |
| 42 | Ejecutar Plan Pruebas Aceptación | 2022-02-10 → 2022-02-18 (+8d) | 2022-02-15 → 2022-02-23 (+8d) |  |  |  |  |
| 43 | **Pruebas de Sistema** |  | 2022-02-09 → 2022-02-16 (+7d) | 18.8d? → 24.12d? |  |  |  |
| 45 | **Servidor Amazon** | 2022-02-07 → 2022-02-14 (+7d) | 2022-02-09 → 2022-02-16 (+7d) |  |  |  |  |
| 46 | Ejecutar Plan Pruebas Sistema I | 2022-02-07 → 2022-02-14 (+7d) | 2022-02-08 → 2022-02-15 (+7d) |  |  |  |  |
| 47 | Ejecutar Plan Pruebas Sistema II | 2022-02-08 → 2022-02-15 (+7d) | 2022-02-09 → 2022-02-16 (+7d) |  |  |  |  |
| 48 | **Pruebas de Integración** | 2022-01-19 → 2022-01-24 (+5d) | 2022-02-07 → 2022-02-14 (+7d) | 12.26d? → 15.5d? |  |  |  |
| 49 | Elaborar Plan Pruebas Integración | 2022-01-19 → 2022-01-24 (+5d) | 2022-01-26 → 2022-01-28 (+2d) |  |  | 5.26d → 8.5d |  |
| 50 | **Servidor Amazon** | 2022-02-02 → 2022-02-10 (+8d) | 2022-02-07 → 2022-02-14 (+7d) |  |  |  |  |
| 51 | Ejecutar Plan Pruebas Integración | 2022-02-02 → 2022-02-10 (+8d) | 2022-02-07 → 2022-02-14 (+7d) |  |  |  |  |
| 52 | **Finalización** | 2022-02-07 → 2022-02-14 (+7d) | 2022-02-28 → 2022-03-09 (+9d) | 15.62d? → 16.88d? |  |  |  |
| 53 | Test de Usabilidad | 2022-02-07 → 2022-02-14 (+7d) | 2022-02-08 → 2022-02-15 (+7d) |  |  |  |  |
| 54 | Preparar Paquete de Instalación | 2022-02-07 → 2022-02-14 (+7d) | 2022-02-07 → 2022-02-15 (+8d) |  |  | 15.03d → 16.27d |  |
| 55 | Actualizar Doc. Usuario | 2022-02-09 → 2022-02-16 (+7d) | 2022-02-10 → 2022-02-18 (+8d) | 1d? → 1.5d? |  |  | resources D1; D2; Papel [10000%]; Toner [10000%]; D3 → D1; D2; Papel [10000%]; Toner [10000%] |
| 56 | Elaborar Plan Instalación & Formación | 2022-02-15 → 2022-02-23 (+8d) | 2022-02-16 → 2022-02-24 (+8d) | 1d? → 1.5d? |  |  | resources D1; D2; D3 → D1; D2 |
| 57 | Subcontrata Instalación Infraestructura Cliente INICIO | 2022-02-16 → 2022-02-24 (+8d) | 2022-02-16 → 2022-02-24 (+8d) |  |  |  |  |
| 58 | Subcontrata Instalación Infraestructura Cliente FIN | 2022-02-23 → 2022-03-03 (+8d) | 2022-02-23 → 2022-03-03 (+8d) |  |  |  |  |
| 59 | Instalación de Cliente | 2022-02-23 → 2022-03-03 (+8d) | 2022-02-24 → 2022-03-07 (+11d) | 1.25d? → 1.5d? |  |  | resources DS1; DS2; DS3; DS4; DS5; Transporte [0.1%]; DS6 → DS1; DS2; DS3; DS4; DS5; Transporte [0.1%] |
| 60 | Formación | 2022-02-24 → 2022-03-07 (+11d) | 2022-02-28 → 2022-03-09 (+9d) |  |  |  |  |

## Version 14 (data date 2021-12-27, saved 2021-11-10, file Seguimiento 100pc.mpp)

Last finish 2022-03-09 → 2022-03-17 (+8d). Complete tasks 14 → 47.

Changed:

| ID | Task | Start | Finish | Duration | Complete | Total float | Other |
| --- | --- | --- | --- | --- | --- | --- | --- |
| 14 | **Diseño** |  | 2022-01-27 → 2022-01-25 A (-2d) | 33.12d? → 30.38d? | 28% → 100% | 28.38d → none |  |
| 15 | **Diseño Alto Nivel** |  | 2022-01-13 → 2022-01-11 A (-2d) | 22.88d? → 20.88d? | 43% → 100% | 38.62d → none |  |
| 16 | Elaborar Arquitectura (diseño alto nivel) I |  | 2021-12-28 A |  | 96% → 100% | 0d → none |  |
| 17 | Elaborar Doc. Técnico Diseño 1 |  | 2021-12-28 A |  | 96% → 100% | 51.12d → none |  |
| 18 | Elaborar Arquitectura (diseño alto nivel) II | 2021-12-28 A | 2022-01-13 → 2022-01-11 A (-2d) |  | 0% → 100% | 0d → none |  |
| 19 | Elaborar Doc. Técnico Diseño 2 | 2021-12-28 A | 2022-01-13 → 2022-01-11 A (-2d) |  | 0% → 100% | 38.62d → none |  |
| 22 | Diseño BBDD (diseño alto nivel) II |  | 2022-01-07 A |  | 31% → 100% | 4.12d → none |  |
| 23 | Elaborar Doc. Técnico Diseño 4 |  | 2022-01-07 A |  | 31% → 100% | 42.75d → none |  |
| 24 | **Diseño Bajo Nivel** | 2021-12-28 A | 2022-01-21 → 2022-01-19 A (-2d) | 18.75d? → 16.67d? | 0% → 100% | 0d → none |  |
| 25 | Detalle Componentes (diseño bajo nivel) I | 2021-12-28 A | 2022-01-13 A | 12.5d? → 14.5d? | 0% → 100% | 0d → none |  |
| 26 | Elaborar Doc. Técnico Diseño 5 | 2021-12-28 A | 2022-01-13 A | 12.5d? → 14.5d? | 0% → 100% | 38.62d → none |  |
| 27 | Detalle Componentes (diseño bajo nivel) II | 2022-01-13 A | 2022-01-21 → 2022-01-19 A (-2d) | 6.25d? → 4.17d? | 0% → 100% | 0d → none | resources D1 [80%]; D2 [80%] → D1 [80%]; D2 [80%]; D3 [80%] |
| 28 | Elaborar Doc. Técnico Diseño 6 | 2022-01-13 A | 2022-01-21 → 2022-01-19 A (-2d) | 6.25d? → 4.17d? | 0% → 100% | 8.5d → none | resources D1 [20%]; D2 [20%]; Papel [2500%]; Toner [2500%] → D1 [20%]; D2 [20%]; Papel [2500%]; Toner [2500%]; D3 [20%] |
| 29 | Revisión Técnica de Diseño Software (RDS) | 2022-01-24 → 2022-01-19 A (-5d) | 2022-01-25 → 2022-01-21 A (-4d) |  | 0% → 100% | 0d → none |  |
| 30 | Actualizar Doc. Usuario | 2022-01-26 → 2022-01-21 A (-5d) | 2022-01-27 → 2022-01-25 A (-2d) | 2d? → 1.33d? | 0% → 100% | 0d → none | resources D1; D2; Papel [10000%]; Toner [10000%] → D1; D2; Papel [10000%]; Toner [10000%]; D3 |
| 31 | **Implementación** | 2022-01-28 → 2022-02-09 A (+12d) | 2022-02-09 → 2022-02-17 A (+8d) | 9d? → 6.43d? | 0% → 100% | 0d → none |  |
| 32 | Implementar BBDD | 2022-01-28 → 2022-02-09 A (+12d) | 2022-02-03 → 2022-02-11 A (+8d) | 5d? → 2.5d? | 0% → 100% | 23.38d → none | resources DS1 → DS1; DS6 |
| 33 | Implementar Unidades I | 2022-01-28 → 2022-02-09 A (+12d) | 2022-02-03 → 2022-02-11 A (+8d) | 5d? → 2.5d | 0% → 100% | 0d → none | resources DS2 [50%]; DS3 [50%]; DS4 [50%]; DS5 [50%] → DS2 [50%]; DS3 [50%]; DS4 [50%]; DS5 [50%]; DS7 [50%] |
| 34 | Implementar Unidades II | 2022-02-04 → 2022-02-11 A (+7d) | 2022-02-09 → 2022-02-17 A (+8d) | 4d? → 3.93d? | 0% → 100% | 0d → none | resources DS1 [50%]; DS2 [50%]; DS3 [50%]; DS4 [50%]; DS5 [50%] → DS1 [50%]; DS2 [50%]; DS3 [50%]; DS4 [50%]; DS5 [50%]; DS6 [50%]; DS7 [50%] |
| 35 | Documentar Unidades I | 2022-01-28 → 2022-02-09 A (+12d) | 2022-02-03 → 2022-02-11 A (+8d) | 5d? → 2.5d | 0% → 100% | 0d → none | resources DS2 [20%]; DS3 [20%]; DS4 [20%]; DS5 [20%] → DS2 [20%]; DS3 [20%]; DS4 [20%]; DS5 [20%]; DS7 [20%] |
| 36 | Documentar Unidades II | 2022-02-04 → 2022-02-11 A (+7d) | 2022-02-09 → 2022-02-17 A (+8d) | 4d? → 3.93d? | 0% → 100% | 0d → none | resources DS1 [20%]; DS2 [20%]; DS3 [20%]; DS4 [20%]; DS5 [20%] → DS1 [20%]; DS2 [20%]; DS3 [20%]; DS4 [20%]; DS5 [20%]; DS6 [20%]; DS7 [20%] |
| 37 | **Pruebas de Unidad** | 2022-01-28 → 2022-02-09 A (+12d) | 2022-02-09 → 2022-02-17 A (+8d) | 9d? → 6.43d? | 0% → 100% | 0d → none |  |
| 38 | Ejecutar Pruebas de Unidad I | 2022-01-28 → 2022-02-09 A (+12d) | 2022-02-03 → 2022-02-11 A (+8d) | 5d? → 2.5d | 0% → 100% | 0d → none | resources DS2 [30%]; DS3 [30%]; DS4 [30%]; DS5 [30%] → DS2 [30%]; DS3 [30%]; DS4 [30%]; DS5 [30%]; DS7 [30%] |
| 39 | Ejecutar Pruebas de Unidad II | 2022-02-04 → 2022-02-11 A (+7d) | 2022-02-09 → 2022-02-17 A (+8d) | 4d? → 3.93d? | 0% → 100% | 0d → none | resources DS1 [30%]; DS2 [30%]; DS3 [30%]; DS4 [30%]; DS5 [30%] → DS1 [30%]; DS2 [30%]; DS3 [30%]; DS4 [30%]; DS5 [30%]; DS6 [30%]; DS7 [30%] |
| 40 | **Pruebas de Aceptación** |  | 2022-02-23 → 2022-03-03 A (+8d) | 57.25d? → 63.75d? | 50% → 100% | 0d → none |  |
| 42 | Ejecutar Plan Pruebas Aceptación | 2022-02-18 → 2022-02-28 A (+10d) | 2022-02-23 → 2022-03-03 A (+8d) |  | 0% → 100% | 0d → none |  |
| 43 | **Pruebas de Sistema** | 2022-01-13 → 2022-01-11 A (-2d) | 2022-02-16 → 2022-02-25 A (+9d) | 24.12d? → 33.12d? | 0% → 100% | 0d → none |  |
| 44 | Elaborar Plan Pruebas Sistema | 2022-01-13 → 2022-01-11 A (-2d) | 2022-01-18 → 2022-01-14 A (-4d) |  | 0% → 100% | 18.75d → none |  |
| 45 | **Servidor Amazon** | 2022-02-14 → 2022-02-23 A (+9d) | 2022-02-16 → 2022-02-25 A (+9d) |  | 0% → 100% | 0d → none |  |
| 46 | Ejecutar Plan Pruebas Sistema I | 2022-02-14 → 2022-02-23 A (+9d) | 2022-02-15 → 2022-02-24 A (+9d) |  | 0% → 100% | 0d → none |  |
| 47 | Ejecutar Plan Pruebas Sistema II | 2022-02-15 → 2022-02-24 A (+9d) | 2022-02-16 → 2022-02-25 A (+9d) |  | 0% → 100% | 0d → none |  |
| 48 | **Pruebas de Integración** | 2022-01-24 → 2022-01-19 A (-5d) | 2022-02-14 → 2022-02-23 A (+9d) | 15.5d? → 24.58d? | 0% → 100% | 0d → none |  |
| 49 | Elaborar Plan Pruebas Integración | 2022-01-24 → 2022-01-19 A (-5d) | 2022-01-28 → 2022-01-26 A (-2d) |  | 0% → 100% | 8.5d → none |  |
| 50 | **Servidor Amazon** | 2022-02-10 → 2022-02-17 A (+7d) | 2022-02-14 → 2022-02-23 A (+9d) | 2.5d? → 4.07d? | 0% → 100% | 0d → none |  |
| 51 | Ejecutar Plan Pruebas Integración | 2022-02-10 → 2022-02-17 A (+7d) | 2022-02-14 → 2022-02-23 A (+9d) | 2.5d? → 4.07d? | 0% → 100% | 0d → none |  |
| 52 | **Finalización** | 2022-02-14 → 2022-02-23 A (+9d) | 2022-03-09 → 2022-03-17 A (+8d) | 16.88d? → 15.88d? | 0% → 100% | 0d → none |  |
| 53 | Test de Usabilidad | 2022-02-14 → 2022-02-23 A (+9d) | 2022-02-15 → 2022-02-24 A (+9d) |  | 0% → 100% | 1.38d → none |  |
| 54 | Preparar Paquete de Instalación | 2022-02-14 → 2022-02-23 A (+9d) | 2022-02-15 → 2022-02-24 A (+9d) |  | 0% → 100% | 16.27d → none |  |
| 55 | Actualizar Doc. Usuario | 2022-02-16 → 2022-02-25 A (+9d) | 2022-02-18 → 2022-02-28 A (+10d) | 1.5d? → 1d? | 0% → 100% | 0d → none | resources D1; D2; Papel [10000%]; Toner [10000%] → D1; D2; Papel [10000%]; Toner [10000%]; D3 |
| 56 | Elaborar Plan Instalación & Formación | 2022-02-23 → 2022-03-03 A (+8d) | 2022-02-24 → 2022-03-04 A (+8d) | 1.5d? → 1d? | 0% → 100% | 0d → none | resources D1; D2 → D1; D2; D3 |
| 57 | Subcontrata Instalación Infraestructura Cliente INICIO | 2022-02-24 → 2022-03-04 A (+8d) | 2022-02-24 → 2022-03-04 A (+8d) |  | 0% → 100% | 0d → none |  |
| 58 | Subcontrata Instalación Infraestructura Cliente FIN | 2022-03-03 → 2022-03-11 A (+8d) | 2022-03-03 → 2022-03-11 A (+8d) |  | 0% → 100% | 0d → none |  |
| 59 | Instalación de Cliente | 2022-03-03 → 2022-03-11 A (+8d) | 2022-03-07 → 2022-03-15 A (+8d) |  | 0% → 100% | 0d → none | resources DS1; DS2; DS3; DS4; DS5; Transporte [0.1%] → DS1; DS2; DS3; DS4; DS5; Transporte [0.1%]; DS6 |
| 60 | Formación | 2022-03-07 → 2022-03-15 A (+8d) | 2022-03-09 → 2022-03-17 A (+8d) |  | 0% → 100% | 0d → none |  |
